# Gantt AY Contingencia

Schedule from MS Project, 2015-04-12 to 2015-11-21, status date 2015-06-07, 24 hours a day, A marks actual dates.

## Calendars

- AsociateYa: Mon-Fri 09:00-13:00, 15:00-19:00; Sat-Sun off.
- AsociateYaContingencia: Mon-Fri 09:00-13:00, 15:00-19:00; Sat-Sun off.

## Resources

| Resource | Group |
| --- | --- |
| Croci-ANALISTA FUNCIONAL | ANALISTA FUNCIONAL |
| Budic-PROJECT MANAGER | PROJECT MANAGER |
| Tiberti-ADMINISTRADOR DE BASE DE DATOS | ADMINISTRADOR DE BASE DE DATOS |
| Tiberti-DESAROLLADOR | DESAROLLADOR |
| Budic-TESTER | TESTER |
| Croci-DISEÑADOR DE EXPERIENCIA DE USUARIO | DISEÑADOR DE EXPERIENCIA DE USUARIO |
| Rodriguez-ARQUITECTO DE SOFTWARE | ARQUITECTO DE SOFTWARE |
| Tiberti-ADMINISTRADOR DEL ENTORNO DE DESARROLLO | ADMINISTRADOR DEL ENTORNO DE DESARROLLO |
| Croci-DESAROLLADOR | DESAROLLADOR |
| Budic-DESAROLLADOR | DESAROLLADOR |
| Rodriguez-DESAROLLADOR | DESAROLLADOR |
| Budic-ANALISTA FUNCIONAL | ANALISTA FUNCIONAL |
| Rodriguez-PROJECT CONTROLLER | PROJECT CONTROLLER |

## Schedule

| ID | WBS | Task | Duration | Start | Finish | Predecessors | Complete | Calendar | Resources | Work | Actual work |
| --- | --- | --- | --- | --- | --- | --- | --- | --- | --- | --- | --- |
| 1 | 1 | **Análisis** | 2.5d | 2015-04-12 A | 2015-05-17 A |  | 100% |  |  | 124h | 124h |
| 2 | 1.1 | **Riesgos** | 0.42d | 2015-04-12 A | 2015-04-18 A |  | 100% |  |  | 39h | 39h |
| 3 | 1.1.1 | Identificar los riegos | 2h | 2015-04-12 A | 2015-04-12 A |  | 100% |  | Budic-PROJECT MANAGER; Tiberti-ADMINISTRADOR DE BASE DE DATOS; Rodriguez-ARQUITECTO DE SOFTWARE; Rodriguez-PROJECT CONTROLLER; Budic-ANALISTA FUNCIONAL; Croci-DESAROLLADOR | 11h | 11h |
| 4 | 1.1.2 | Analizar los riegos | 3h | 2015-04-12 A | 2015-04-12 A | 3 | 100% |  | Budic-PROJECT MANAGER; Tiberti-ADMINISTRADOR DE BASE DE DATOS; Rodriguez-ARQUITECTO DE SOFTWARE; Rodriguez-PROJECT CONTROLLER; Budic-ANALISTA FUNCIONAL; Croci-DESAROLLADOR | 12h | 12h |
| 5 | 1.1.3 | Planificación de riesgos | 6h | 2015-04-12 A | 2015-04-18 A | 4 | 100% |  | Budic-PROJECT MANAGER; Rodriguez-PROJECT CONTROLLER; Budic-ANALISTA FUNCIONAL | 14h | 14h |
| 6 | 1.1.4 | Completar tabla de riesgos | 1h | 2015-04-18 A | 2015-04-18 A | 5 | 100% |  | Budic-PROJECT MANAGER; Rodriguez-PROJECT CONTROLLER | 2h | 2h |
| 7 | 1.2 | **Planificación** | 1.5d | 2015-04-19 A | 2015-05-10 A |  | 100% |  |  | 54h | 54h |
| 8 | 1.2.1 | Identificar las tareas para cada entregable | 8h | 2015-04-19 A | 2015-04-25 A | 21 | 100% |  | Budic-PROJECT MANAGER | 8h | 8h |
| 9 | 1.2.2 | Definir las precedencias | 4h | 2015-04-25 A | 2015-04-26 A | 8 | 100% |  | Budic-PROJECT MANAGER | 4h | 4h |
| 10 | 1.2.3 | Estimar los tiempos de cada tarea | 3h | 2015-04-26 A | 2015-04-26 A | 9 | 100% |  | Budic-PROJECT MANAGER; Tiberti-ADMINISTRADOR DE BASE DE DATOS; Tiberti-ADMINISTRADOR DEL ENTORNO DE DESARROLLO; Croci-ANALISTA FUNCIONAL; Rodriguez-ARQUITECTO DE SOFTWARE; Budic-TESTER; Croci-DISEÑADOR DE EXPERIENCIA DE USUARIO | 14h | 14h |
| 11 | 1.2.4 | Calcular el camino crítico | 3h | 2015-05-10 A | 2015-05-10 A | 12 | 100% |  | Rodriguez-PROJECT CONTROLLER | 3h | 3h |
| 12 | 1.2.5 | Realizar diagrama de Gantt | 25h | 2015-04-26 A | 2015-05-03 A | 10 | 100% | AsociateYaContingencia | Rodriguez-PROJECT CONTROLLER | 25h | 25h |
| 13 | 1.3 | **Roles y Responsabilidades** | 0.21d | 2015-05-10 A | 2015-05-12 A |  | 100% |  |  | 7h | 7h |
| 14 | 1.3.1 | Identificar roles | 2h | 2015-05-10 A | 2015-05-10 A | 12 | 100% |  | Budic-PROJECT MANAGER; Croci-ANALISTA FUNCIONAL | 4h | 4h |
| 15 | 1.3.2 | Asignar responsabilidades a los roles | 3h | 2015-05-10 A | 2015-05-12 A | 14 | 100% |  | Budic-PROJECT MANAGER | 3h | 3h |
| 16 | 1.4 | **Habilidades y Competencias** | 0.25d | 2015-05-12 A | 2015-05-16 A |  | 100% |  |  | 6h | 6h |
| 17 | 1.4.1 | Asignar competencias a los roles | 6h | 2015-05-12 A | 2015-05-16 A | 15 | 100% |  | Budic-PROJECT MANAGER | 6h | 6h |
| 18 | 1.5 | **Comunicación** | 0.04d | 2015-05-16 A | 2015-05-17 A |  | 100% |  |  | 2h | 2h |
| 19 | 1.5.1 | Establecer canales de comunicación entre roles | 2h | 2015-05-16 A | 2015-05-17 A | 17 | 100% |  | Budic-PROJECT MANAGER | 2h | 2h |
| 20 | 1.6 | **WBS** | 0.21d | 2015-04-18 A | 2015-04-19 A |  | 100% |  |  | 16h | 16h |
| 21 | 1.6.1 | Definir entregables | 8h | 2015-04-18 A | 2015-04-19 A | 6 | 100% |  | Budic-PROJECT MANAGER; Croci-ANALISTA FUNCIONAL | 16h | 16h |
| 22 | 2 | **Diseño** | 4.65d | 2015-04-25 A | 2015-06-28 A |  | 100% |  |  | 197h | 197h |
| 23 | 2.1 | **Casos de Uso** | 2.79d | 2015-05-12 A | 2015-06-21 A |  | 100% |  |  | 104h | 104h |
| 24 | 2.1.1 | Identificar actores y funcionalidades | 25h | 2015-05-12 A | 2015-05-24 A | 21, 13 | 100% |  | Croci-ANALISTA FUNCIONAL; Budic-ANALISTA FUNCIONAL | 50h | 50h |
| 25 | 2.1.2 | Describir casos de uso | 48h | 2015-05-24 A | 2015-06-18 A | 24 | 100% |  | Croci-ANALISTA FUNCIONAL; Budic-PROJECT MANAGER | 50h | 50h |
| 26 | 2.1.3 | Describir las relaciones entre los actores y casos de uso | 4h | 2015-06-14 A | 2015-06-21 A | 24, 25 | 100% |  | Croci-ANALISTA FUNCIONAL; Budic-ANALISTA FUNCIONAL | 4h | 4h |

| ID | WBS | Task | Duration | Start | Finish | Predecessors | Complete | Remaining | Total slack | Resources | Work | Actual work |
| --- | --- | --- | --- | --- | --- | --- | --- | --- | --- | --- | --- | --- |
| 27 | 2.2 | **DER** | 2d | 2015-05-24 A | 2015-06-21 A |  | 100% |  |  |  | 38h | 38h |
| 28 | 2.2.1 | Definir entidades y sus atributos | 8h | 2015-05-24 A | 2015-05-29 A | 24 | 100% |  |  | Tiberti-ADMINISTRADOR DE BASE DE DATOS; Croci-ANALISTA FUNCIONAL; Rodriguez-ARQUITECTO DE SOFTWARE; Budic-PROJECT MANAGER | 24h | 24h |
| 29 | 2.2.2 | Describir las relaciones entre las entidades | 8h | 2015-05-29 A | 2015-06-18 A | 28 | 100% |  |  | Tiberti-ADMINISTRADOR DE BASE DE DATOS; Croci-ANALISTA FUNCIONAL | 8h | 8h |
| 30 | 2.2.3 | Normalizar DER | 6h | 2015-06-18 A | 2015-06-21 A | 29 | 100% |  |  | Tiberti-ADMINISTRADOR DE BASE DE DATOS | 6h | 6h |
| 31 | 2.3 | **Maqueta del Front-End** | 0.33d | 2015-06-21 A | 2015-06-26 A |  | 100% |  |  |  | 10h | 10h |
| 32 | 2.3.1 | Diseñar disposición de elementos estéticamente | 10h | 2015-06-21 A | 2015-06-26 A | 30 | 100% |  |  | Croci-DISEÑADOR DE EXPERIENCIA DE USUARIO | 10h | 10h |
| 33 | 2.4 | **Documento De Arquitectura** | 0.21d | 2015-04-25 A | 2015-04-27 A |  | 100% |  |  |  | 8h | 8h |
| 34 | 2.4.1 | Definir arquitectura de software | 8h | 2015-04-25 A | 2015-04-27 A | 8 | 100% |  |  | Rodriguez-ARQUITECTO DE SOFTWARE | 8h | 8h |
| 35 | 2.5 | **Especificación de la BD** | 0.6d | 2015-06-21 A | 2015-06-28 A |  | 100% |  |  |  | 37h | 37h |
| 36 | 2.5.1 | Diseño de tablas de la BD | 6h | 2015-06-21 A | 2015-06-23 A | 30, 26 | 100% |  |  | Tiberti-ADMINISTRADOR DE BASE DE DATOS; Croci-ANALISTA FUNCIONAL; Rodriguez-ARQUITECTO DE SOFTWARE | 18h | 18h |
| 37 | 2.5.2 | Definir tipo y volumen de datos | 3h | 2015-06-26 A | 2015-06-27 A | 38 | 100% |  |  | Tiberti-ADMINISTRADOR DE BASE DE DATOS | 3h | 3h |
| 38 | 2.5.3 | Relaciones entre las tablas de la BD | 3h | 2015-06-23 A | 2015-06-26 A | 36 | 100% |  |  | Tiberti-ADMINISTRADOR DE BASE DE DATOS | 3h | 3h |
| 39 | 2.5.4 | Definir políticas de seguridad e integridad | 5h | 2015-06-27 A | 2015-06-28 A | 37 | 100% |  |  | Tiberti-ADMINISTRADOR DE BASE DE DATOS; Croci-ANALISTA FUNCIONAL; Rodriguez-ARQUITECTO DE SOFTWARE | 13h | 13h |
| 40 | 3 | **Desarrollo** | 14.02d? | 2015-04-27 A | 2015-11-09 |  | 81% | 2.71d? | 0.69d |  | 1288h | 1042.85h |
| 41 | 3.1 | **Capacitacion** | 4.96d? | 2015-04-27 A | 2015-07-05 A |  | 100% |  |  |  | 355h | 355h |
| 42 | 3.1.1 | Inicio Capacitación en HTML | 15h | 2015-04-27 A | 2015-05-04 A | 34 | 100% |  |  | Tiberti-DESAROLLADOR | 15h | 15h |
| 43 | 3.1.2 | Inicio Capacitación en Java | 20h | 2015-04-27 A | 2015-05-11 A | 34 | 100% |  |  | Croci-DESAROLLADOR | 20h | 20h |
| 44 | 3.1.3 | Inicio Capacitación en CSS | 20h | 2015-04-27 A | 2015-05-11 A | 34 | 100% |  |  | Budic-DESAROLLADOR | 20h | 20h |
| 45 | 3.1.4 | Inicio Capacitación en PHP | 20h | 2015-04-27 A | 2015-05-11 A | 34 | 100% |  |  | Rodriguez-DESAROLLADOR | 20h | 20h |
| 46 | 3.1.5 | Capacitación en HTML | 30h | 2015-05-09 A | 2015-05-31 A | 42 | 100% |  |  | Tiberti-DESAROLLADOR | 30h | 30h |
| 47 | 3.1.6 | Capacitación en Java | 10h | 2015-05-11 A | 2015-05-17 A | 43 | 100% |  |  | Croci-DESAROLLADOR | 10h | 10h |
| 48 | 3.1.7 | Capacitación en CSS | 50h | 2015-05-09 A | 2015-07-05 A | 44 | 100% |  |  | Budic-DESAROLLADOR | 50h | 50h |
| 49 | 3.1.8 | Capacitación en PHP | 70h | 2015-05-11 A | 2015-06-14 A | 45 | 100% |  |  | Rodriguez-DESAROLLADOR | 70h | 70h |
| 50 | 3.1.9 | Capacitacion Symfony | 53.02h? | 2015-05-11 A | 2015-06-20 A | 42, 43, 44, 45 | 100% |  |  | Budic-DESAROLLADOR; Croci-DESAROLLADOR; Rodriguez-DESAROLLADOR; Tiberti-DESAROLLADOR | 120h | 120h |

| ID | WBS | Task | Duration | Start | Finish | Predecessors | Complete | Remaining | Total slack | Free slack | Calendar | Resources | Work | Actual work |
| --- | --- | --- | --- | --- | --- | --- | --- | --- | --- | --- | --- | --- | --- | --- |
| 51 | 3.2 | **Escribir código de Plantillas** | 10.92d? | 2015-05-11 A | 2015-10-11 |  | 64% | 3.92d? | 2.79d |  |  |  | 234h | 150h |
| 52 | 3.2.1 | Inscribirse al portal | 15h? | 2015-05-11 A | 2015-06-21 | 42, 44 | 90% | 1.5h? | 10.56d | 0d |  | Budic-DESAROLLADOR | 15h | 13.5h |
| 53 | 3.2.2 | Autenticarse como usuario | 15h? | 2015-05-17 A | 2015-06-27 | 52 | 90% | 1.5h? | 10.42d | 0d |  | Budic-DESAROLLADOR | 15h | 13.5h |
| 54 | 3.2.3 | Modificar Usuario | 10h? | 2015-06-01 A | 2015-06-27 | 53 | 90% | 1h? | 10.33d | 0d |  | Budic-DESAROLLADOR | 10h | 9h |
| 55 | 3.2.4 | Dar de baja Usuario | 10h? | 2015-06-07 A | 2015-07-04 | 54 | 90% | 1h? | 10d |  |  | Budic-DESAROLLADOR | 10h | 9h |
| 56 | 3.2.5 | Inscribirse como emprendedor | 15h? | 2015-07-11 A | 2015-07-20 | 139 | 90% | 1.5h? | 8.53d | 0d |  | Budic-DESAROLLADOR | 15h | 13.5h |
| 57 | 3.2.6 | Aprobar inscripción como emprendedor | 10h? | 2015-07-15 A | 2015-07-26 | 56 | 90% | 1h? | 8.19d | 0d |  | Budic-DESAROLLADOR | 10h | 9h |
| 58 | 3.2.7 | Aplicar para crear emprendimiento | 10h? | 2015-07-21 A | 2015-08-01 | 57 | 90% | 1h? | 7.85d | 0d |  | Budic-DESAROLLADOR | 10h | 9h |
| 59 | 3.2.8 | Aprobar emprendimiento | 15h? | 2015-08-01 A | 2015-08-08 | 58 | 90% | 1.5h? | 15.58d | 0d | AsociateYaContingencia | Budic-DESAROLLADOR | 15h | 13.5h |
| 60 | 3.2.9 | Modificar emprendimiento | 10h? | 2015-08-04 A | 2015-08-10 | 59 | 90% | 1h? | 14.99d | 0d | AsociateYaContingencia | Budic-DESAROLLADOR | 10h | 9h |
| 61 | 3.2.10 | Dar de baja emprendimiento | 10h? | 2015-08-09 A | 2015-08-16 | 60 | 90% | 1h? | 14.24d |  | AsociateYaContingencia | Budic-DESAROLLADOR | 10h | 9h |
| 62 | 3.2.11 | Aprobar baja de emprendimiento | 10h? | 2015-08-16 A | 2015-08-21 | 140 | 60% | 4h? | 9.87d | 0.04d | AsociateYaContingencia | Budic-DESAROLLADOR | 10h | 6h |
| 63 | 3.2.12 | Responder a inversor | 10h? | 2015-08-22 A | 2015-08-24 | 62 | 90% | 1h? | 9.16d | 0.54d | AsociateYaContingencia | Budic-DESAROLLADOR | 10h | 9h |
| 64 | 3.2.13 | Asociacion a emprendimiento | 10h? | 2015-09-01 A | 2015-09-06 | 63 | 90% | 1h? | 7.45d | 0.42d | AsociateYaContingencia | Budic-DESAROLLADOR | 10h | 9h |
| 65 | 3.2.14 | Consultar información a emprendedor | 10h? | 2015-09-12 A | 2015-09-13 | 64 | 90% | 1h? | 6.24d | 0d | AsociateYaContingencia | Budic-DESAROLLADOR | 10h | 9h |
| 66 | 3.2.15 | Buscar/filtrar emprendimientos | 10h? | 2015-09-13 A | 2015-09-18 | 65 | 90% | 1h? | 5.87d | 0d | AsociateYaContingencia | Budic-DESAROLLADOR | 10h | 9h |
| 67 | 3.2.16 | Realizar Pago | 20h? | 2015-09-18 | 2015-10-11 | 66 |  |  | 5.87d |  | AsociateYaContingencia | Budic-DESAROLLADOR | 20h |  |
| 68 | 3.2.17 | Presentar estado de resultados | 10h? | 2015-09-25 | 2015-09-27 | 141 |  |  | 4.71d | 0d | AsociateYaContingencia | Budic-DESAROLLADOR | 10h |  |
| 69 | 3.2.18 | Promocionar estado de Resultados | 10h? | 2015-09-27 | 2015-10-02 | 68 |  |  | 4.71d | 0d | AsociateYaContingencia | Budic-DESAROLLADOR | 10h |  |
| 70 | 3.2.19 | Cancelar proyecto (manualmente y por finalizacion) | 10h? | 2015-10-02 | 2015-10-04 | 69 |  |  | 4.71d | 0d | AsociateYaContingencia | Budic-DESAROLLADOR | 10h |  |
| 71 | 3.2.20 | Promocionar emprendimiento | 10h? | 2015-10-04 | 2015-10-07 | 70 |  |  | 4.71d | 0d | AsociateYaContingencia | Budic-DESAROLLADOR | 10h |  |
| 72 | 3.2.21 | Difundir Mail | 4h? | 2015-10-07 | 2015-10-09 | 71 |  |  | 6.36d |  | AsociateYaContingencia | Budic-DESAROLLADOR | 4h |  |
| 73 | 3.3 | **Escribir código JavaScript** | 9.71d? | 2015-05-17 A | 2015-09-29 |  | 88% | 1.21d? | 2.79d |  |  |  | 200h | 175h |
| 74 | 3.3.1 | Inscribirse al portal | 15h? | 2015-05-17 A | 2015-05-24 A | 43 | 100% |  |  |  |  | Croci-DESAROLLADOR | 15h | 15h |
| 75 | 3.3.2 | Autenticarse como usuario | 15h? | 2015-05-23 A | 2015-06-08 A | 74 | 100% |  |  |  |  | Croci-DESAROLLADOR | 15h | 15h |
| 76 | 3.3.3 | Modificar Usuario | 10h? | 2015-05-27 A | 2015-05-31 A | 75 | 100% |  |  |  |  | Croci-DESAROLLADOR | 10h | 10h |
| 77 | 3.3.4 | Dar de baja Usuario | 10h? | 2015-05-31 A | 2015-06-06 A | 76 | 100% |  |  |  |  | Croci-DESAROLLADOR | 10h | 10h |
| 78 | 3.3.5 | Inscribirse como emprendedor | 15h? | 2015-06-28 A | 2015-08-02 A | 144 | 100% |  |  |  |  | Croci-DESAROLLADOR | 15h | 15h |
| 79 | 3.3.6 | Aprobar inscripción como emprendedor | 10h? | 2015-07-04 A | 2015-07-06 A | 78 | 100% |  |  |  |  | Croci-DESAROLLADOR | 10h | 10h |
| 80 | 3.3.7 | Aplicar para crear emprendimiento | 10h? | 2015-07-06 A | 2015-07-12 A | 79 | 100% |  |  |  |  | Croci-DESAROLLADOR | 10h | 10h |
| 81 | 3.3.8 | Aprobar emprendimiento | 15h? | 2015-07-12 A | 2015-08-08 A | 80 | 100% |  |  |  |  | Croci-DESAROLLADOR | 15h | 15h |
| 82 | 3.3.9 | Modificar emprendimiento | 10h? | 2015-07-19 A | 2015-07-26 A | 81 | 100% |  |  |  |  | Croci-DESAROLLADOR | 10h | 10h |
| 83 | 3.3.10 | Dar de baja emprendimiento | 10h? | 2015-07-26 A | 2015-08-02 A | 82 | 100% |  |  |  |  | Croci-DESAROLLADOR | 10h | 10h |
| 84 | 3.3.11 | Aprobar baja de emprendimiento | 10h? | 2015-08-23 A | 2015-08-26 A | 145 | 100% |  |  |  | AsociateYaContingencia | Croci-DESAROLLADOR | 10h | 10h |
| 85 | 3.3.12 | Responder a inversor | 10h? | 2015-08-26 A | 2015-08-29 A | 84 | 100% |  |  |  | AsociateYaContingencia | Croci-DESAROLLADOR | 10h | 10h |
| 86 | 3.3.13 | Asociacion a emprendimiento | 10h? | 2015-08-30 A | 2015-09-05 A | 85 | 100% |  |  |  | AsociateYaContingencia | Croci-DESAROLLADOR | 10h | 10h |
| 87 | 3.3.14 | Consultar información a emprendedor | 10h? | 2015-09-09 A | 2015-09-13 A | 86 | 100% |  |  |  | AsociateYaContingencia | Croci-DESAROLLADOR | 10h | 10h |
| 88 | 3.3.15 | Buscar/filtrar emprendimientos | 10h? | 2015-09-13 A | 2015-09-19 A | 87 | 100% |  |  |  | AsociateYaContingencia | Croci-DESAROLLADOR | 10h | 10h |
| 89 | 3.3.16 | Realizar Pago | 10h? | 2015-09-19 A | 2015-09-20 | 88 | 50% | 5h? | 5.25d | 0d | AsociateYaContingencia | Croci-DESAROLLADOR | 10h | 5h |
| 90 | 3.3.17 | Presentar estado de resultados | 2h? | 2015-09-25 | 2015-09-26 | 146 |  |  | 5.38d | 0d | AsociateYaContingencia | Croci-DESAROLLADOR | 2h |  |
| 91 | 3.3.18 | Promocionar estado de Resultados | 3h? | 2015-09-26 | 2015-09-26 | 90 |  |  | 5.38d | 0d | AsociateYaContingencia | Croci-DESAROLLADOR | 3h |  |
| 92 | 3.3.19 | Cancelar proyecto (manualmente y por finalizacion) | 5h? | 2015-09-26 | 2015-09-27 | 91 |  |  | 5.38d | 0d | AsociateYaContingencia | Croci-DESAROLLADOR | 5h |  |
| 93 | 3.3.20 | Promocionar emprendimiento | 5h? | 2015-09-27 | 2015-09-27 | 92 |  |  | 5.38d | 0d | AsociateYaContingencia | Croci-DESAROLLADOR | 5h |  |
| 94 | 3.3.21 | Difundir mail | 5h? | 2015-09-27 | 2015-09-29 | 93 |  |  | 5.81d | 2.79d | AsociateYaContingencia | Croci-DESAROLLADOR | 5h |  |

| ID | WBS | Task | Type | Duration | Start | Finish | Predecessors | Complete | Remaining | Total slack | Free slack | Calendar | Resources | Work | Actual work |
| --- | --- | --- | --- | --- | --- | --- | --- | --- | --- | --- | --- | --- | --- | --- | --- |
| 95 | 3.4 | **Escribir código PHP** |  | 10.5d? | 2015-06-14 A | 2015-11-08 |  | 78% | 2.31d? | 0.5d |  |  |  | 264h | 205.85h |
| 96 | 3.4.1 | Inscribirse al portal |  | 25h? | 2015-06-14 A | 2015-07-08 A | 45 | 100% |  |  |  |  | Rodriguez-DESAROLLADOR | 25h | 25h |
| 97 | 3.4.2 | Autenticarse como usuario |  | 20h? | 2015-06-21 A | 2015-08-20 A | 154 | 100% |  |  |  |  | Rodriguez-DESAROLLADOR | 20h | 20h |
| 98 | 3.4.3 | Modificar Usuario |  | 15h? | 2015-06-28 A | 2015-08-30 A | 97 | 100% |  |  |  |  | Rodriguez-DESAROLLADOR | 15h | 15h |
| 99 | 3.4.4 | Dar de baja Usuario |  | 10h? | 2015-07-03 A | 2015-08-31 A | 98 | 100% |  |  |  |  | Rodriguez-DESAROLLADOR | 10h | 10h |
| 100 | 3.4.5 | Inscribirse como emprendedor |  | 15h? | 2015-07-05 A | 2015-09-05 A | 99 | 100% |  |  |  |  | Rodriguez-DESAROLLADOR | 15h | 15h |
| 101 | 3.4.6 | Aprobar inscripción como emprendedor |  | 15h? | 2015-07-11 A | 2015-09-07 A | 100 | 100% |  |  |  |  | Rodriguez-DESAROLLADOR | 15h | 15h |
| 102 | 3.4.7 | Aplicar para crear emprendimiento |  | 15h? | 2015-07-14 A | 2015-09-12 A | 101 | 100% |  |  |  |  | Rodriguez-DESAROLLADOR | 15h | 15h |
| 103 | 3.4.8 | Aprobar emprendimiento |  | 20h? | 2015-08-01 A | 2015-10-04 A | 155 | 100% |  |  |  | AsociateYaContingencia | Rodriguez-DESAROLLADOR | 20h | 20h |
| 104 | 3.4.9 | Modificar emprendimiento |  | 15h? | 2015-08-03 A | 2015-10-07 A | 103 | 100% |  |  |  | AsociateYaContingencia | Rodriguez-DESAROLLADOR | 15h | 15h |
| 105 | 3.4.10 | Dar de baja emprendimiento |  | 10h? | 2015-08-09 A | 2015-10-07 A | 104 | 100% |  |  |  | AsociateYaContingencia | Rodriguez-DESAROLLADOR | 10h | 10h |
| 106 | 3.4.11 | Aprobar baja de emprendimiento |  | 15h? | 2015-10-07 A | 2015-10-11 A | 105 | 100% |  |  |  | AsociateYaContingencia | Rodriguez-DESAROLLADOR | 15h | 15h |
| 107 | 3.4.12 | Responder a inversor |  | 10h? | 2015-10-11 A | 2015-10-14 A | 106 | 100% |  |  |  | AsociateYaContingencia | Rodriguez-DESAROLLADOR | 10h | 10h |
| 108 | 3.4.13 | Asociacion a emprendimiento |  | 6h? | 2015-10-17 | 2015-10-18 | 107 |  |  | 4.05d | 0d | AsociateYaContingencia | Rodriguez-DESAROLLADOR | 6h |  |
| 109 | 3.4.14 | Consultar información a emprendedor |  | 14h? | 2015-10-18 A | 2015-10-23 A | 156 | 100% |  |  |  | AsociateYaContingencia | Rodriguez-DESAROLLADOR | 14h | 14h |
| 110 | 3.4.15 | Buscar/filtrar emprendimientos |  | 3h? | 2015-10-23 A | 2015-10-24 | 109 | 33% | 2h? | 0d |  | AsociateYaContingencia | Rodriguez-DESAROLLADOR | 3h | 1h |
| 111 | 3.4.16 | Realizar Pago |  | 25h? | 2015-09-20 A | 2015-10-29 | 110 | 23% | 19.15h? | 0d |  | AsociateYaContingencia | Rodriguez-DESAROLLADOR | 25h | 5.85h |
| 112 | 3.4.17 | Presentar estado de resultados |  | 3h? | 2015-10-29 | 2015-10-30 | 111 |  |  | 0d |  | AsociateYaContingencia | Rodriguez-DESAROLLADOR | 3h |  |
| 113 | 3.4.18 | Promocionar estado de Resultados |  | 3h? | 2015-10-31 | 2015-11-01 | 157 |  |  | 0d |  | AsociateYaContingencia | Rodriguez-DESAROLLADOR | 3h |  |
| 114 | 3.4.19 | Cancelar proyecto (manualmente y por finalizacion) |  | 4h? | 2015-11-01 | 2015-11-01 | 113 |  |  | 0d |  | AsociateYaContingencia | Rodriguez-DESAROLLADOR | 4h |  |
| 115 | 3.4.20 | Promocionar emprendimiento |  | 9h? | 2015-11-01 | 2015-11-04 | 114 |  |  | 0d |  | AsociateYaContingencia | Rodriguez-DESAROLLADOR | 9h |  |
| 116 | 3.4.21 | Difundir mail |  | 12h? | 2015-11-04 | 2015-11-08 | 115 |  |  | 0d |  | AsociateYaContingencia | Rodriguez-DESAROLLADOR | 12h |  |
| 117 | 3.5 | **Escribir script de la base de datos** |  | 0.46d? | 2015-06-28 A | 2015-07-05 A |  | 100% |  |  |  |  |  | 15h | 15h |
| 118 | 3.5.1 | Script inicial |  | 12h? | 2015-06-28 A | 2015-07-05 A | 39 | 100% |  |  |  |  | Rodriguez-DESAROLLADOR; Rodriguez-ARQUITECTO DE SOFTWARE; Tiberti-ADMINISTRADOR DE BASE DE DATOS | 15h | 15h |
| 119 | 3.5.2 | Autenticarse como usuario | inactive | 9h? | 2015-07-05 | 2015-07-11 | 118 |  |  | 8.75d | 0d |  | Tiberti-DESAROLLADOR; Rodriguez-ARQUITECTO DE SOFTWARE | 11h |  |
| 120 | 3.5.3 | Modificar Usuario | inactive | 9h? | 2015-07-11 | 2015-07-15 | 119 |  |  | 8.75d | 0d |  | Tiberti-DESAROLLADOR; Rodriguez-ARQUITECTO DE SOFTWARE | 11h |  |
| 121 | 3.5.4 | Dar de baja Usuario | inactive | 9h? | 2015-07-15 | 2015-07-19 | 120 |  |  | 8.75d |  |  | Tiberti-DESAROLLADOR; Rodriguez-ARQUITECTO DE SOFTWARE | 11h |  |
| 122 | 3.5.5 | Inscribirse como emprendedor | inactive | 9h? | 2015-07-26 | 2015-08-01 | 149 |  |  | 1.25d | 0d |  | Tiberti-DESAROLLADOR; Rodriguez-ARQUITECTO DE SOFTWARE | 11h |  |
| 123 | 3.5.6 | Aprobar inscripción como emprendedor | inactive | 9h? | 2015-08-01 | 2015-08-07 | 122 |  |  | 1.25d | 0d |  | Tiberti-DESAROLLADOR; Rodriguez-ARQUITECTO DE SOFTWARE | 11h |  |
| 124 | 3.5.7 | Aplicar para crear emprendimiento | inactive | 9h? | 2015-08-07 | 2015-08-11 | 123 |  |  | 1.25d | 0d |  | Tiberti-DESAROLLADOR; Rodriguez-ARQUITECTO DE SOFTWARE | 11h |  |
| 125 | 3.5.8 | Aprobar emprendimiento | inactive | 9h? | 2015-08-11 | 2015-08-16 | 124 |  |  | 1.25d | 0d |  | Tiberti-DESAROLLADOR; Rodriguez-ARQUITECTO DE SOFTWARE | 11h |  |
| 126 | 3.5.9 | Modificar emprendimiento | inactive | 20h? | 2015-08-16 | 2015-09-02 | 125 |  |  | 1.25d | 0d |  | Tiberti-DESAROLLADOR; Rodriguez-ARQUITECTO DE SOFTWARE | 20h |  |
| 127 | 3.5.10 | Dar de baja emprendimiento | inactive | 9h? | 2015-09-02 | 2015-09-06 | 126 |  |  | 1.25d | 0d |  | Tiberti-DESAROLLADOR; Rodriguez-ARQUITECTO DE SOFTWARE | 11h |  |
| 128 | 3.5.11 | Solicitar asociación a emprendimiento | inactive | 9h? | 2015-09-09 | 2015-09-13 | 150 |  |  | 1.25d | 0d |  | Tiberti-DESAROLLADOR; Rodriguez-ARQUITECTO DE SOFTWARE | 11h |  |
| 129 | 3.5.12 | Responder a inversor | inactive | 9h? | 2015-09-13 | 2015-09-20 | 128 |  |  | 1.25d | 0d |  | Tiberti-DESAROLLADOR; Rodriguez-ARQUITECTO DE SOFTWARE | 11h |  |
| 130 | 3.5.13 | Aceptar solicitud de asociación | inactive | 9h? | 2015-09-20 | 2015-09-26 | 129 |  |  | 1.25d | 0d |  | Tiberti-DESAROLLADOR; Rodriguez-ARQUITECTO DE SOFTWARE | 11h |  |
| 131 | 3.5.14 | Consultar información a emprendedor | inactive | 9h? | 2015-09-26 | 2015-09-30 | 130 |  |  | 1.25d | 0d |  | Tiberti-DESAROLLADOR; Rodriguez-ARQUITECTO DE SOFTWARE | 11h |  |
| 132 | 3.5.15 | Buscar/filtrar emprendimientos | inactive | 9h? | 2015-09-30 | 2015-10-04 | 131 |  |  | 1.25d | 0d |  | Tiberti-DESAROLLADOR; Rodriguez-ARQUITECTO DE SOFTWARE | 11h |  |
| 133 | 3.5.16 | Pagar | inactive | 9h? | 2015-10-04 | 2015-10-11 | 132 |  |  | 1.25d | 0d |  | Tiberti-DESAROLLADOR; Rodriguez-ARQUITECTO DE SOFTWARE | 11h |  |
| 134 | 3.5.17 | Configurar seguimiento de emprendimiento | inactive | 9h? | 2015-10-11 | 2015-10-18 | 151 |  |  | 1.2d | 0d |  | Tiberti-DESAROLLADOR; Rodriguez-ARQUITECTO DE SOFTWARE | 11h |  |
| 135 | 3.5.18 | Crear Agenda | inactive | 9h? | 2015-10-18 | 2015-10-24 | 134 |  |  | 1.2d | 0d |  | Tiberti-DESAROLLADOR; Rodriguez-ARQUITECTO DE SOFTWARE | 11h |  |
| 136 | 3.5.19 | Modificar agenda | inactive | 9h? | 2015-10-24 | 2015-10-28 | 135 |  |  | 1.2d | 0d |  | Tiberti-DESAROLLADOR; Rodriguez-ARQUITECTO DE SOFTWARE | 11h |  |
| 137 | 3.5.20 | Difundir Mail | inactive | 9h? | 2015-10-28 | 2015-11-01 | 136 |  |  | 1.2d | 0d |  | Tiberti-DESAROLLADOR; Rodriguez-ARQUITECTO DE SOFTWARE | 11h |  |

| ID | WBS | Task | Type | Duration | Start | Finish | Predecessors | Complete | Remaining | Total slack | Free slack | Constraint | Calendar | Resources | Work | Actual work |
| --- | --- | --- | --- | --- | --- | --- | --- | --- | --- | --- | --- | --- | --- | --- | --- | --- |
| 138 | 3.6 | **Revisión de pares de Plantillas** |  | 9d? | 2015-06-13 A | 2015-10-17 |  | 70% | 2.7d? | 2.5d |  |  |  |  | 52h | 40h |
| 139 | 3.6.1 | Revision 1 |  | 16h? | 2015-06-13 A | 2015-06-21 A | 55 | 100% |  |  |  |  |  | Croci-DESAROLLADOR; Rodriguez-DESAROLLADOR | 16h | 16h |
| 140 | 3.6.2 | Revision 2 |  | 7h? | 2015-08-15 A | 2015-08-16 A | 61 | 100% |  |  |  |  |  | Croci-DESAROLLADOR; Rodriguez-DESAROLLADOR | 14h | 14h |
| 141 | 3.6.3 | Revision 3 |  | 5h? | 2015-09-22 A | 2015-09-25 A | 67 | 100% |  |  |  |  | AsociateYaContingencia | Croci-DESAROLLADOR; Rodriguez-DESAROLLADOR | 10h | 10h |
| 142 | 3.6.4 | Revision 4 |  | 12h? | 2015-10-07 | 2015-10-17 | 71 |  |  | 5.19d |  |  | AsociateYaContingencia | Croci-DESAROLLADOR; Rodriguez-DESAROLLADOR | 12h |  |
| 143 | 3.7 | **Revisión de pares de JavaScript** |  | 8.62d? | 2015-06-13 A | 2015-10-11 |  | 44% | 4.85d? | 2.6d | 0d |  |  |  | 72h | 28h |
| 144 | 3.7.1 | Revision 1 |  | 20h? | 2015-06-13 A | 2015-06-28 | 77 | 90% | 2h? | 10.02d |  |  |  | Tiberti-DESAROLLADOR; Budic-DESAROLLADOR | 20h | 18h |
| 145 | 3.7.2 | Revision 2 |  | 20h? | 2015-08-08 A | 2015-08-26 | 83 | 50% | 10h? | 5.85d |  |  |  | Tiberti-DESAROLLADOR; Budic-DESAROLLADOR | 20h | 10h |
| 146 | 3.7.3 | Revision 3 |  | 8h? | 2015-09-20 | 2015-09-24 | 89 |  |  | 5.25d | 0d |  | AsociateYaContingencia | Tiberti-DESAROLLADOR; Budic-DESAROLLADOR | 16h |  |
| 147 | 3.7.4 | Revision 4 |  | 16h? | 2015-09-27 | 2015-10-11 | 93 |  |  | 5.38d |  |  | AsociateYaContingencia | Tiberti-DESAROLLADOR; Budic-DESAROLLADOR | 16h |  |
| 148 | 3.8 | **Revisión de pares de la base de datos** |  | 0.79d? | 2015-07-16 A | 2015-07-26 A |  | 100% |  |  |  |  |  |  | 18h | 18h |
| 149 | 3.8.1 | Revision 1 |  | 16h? | 2015-07-16 A | 2015-07-26 A | 118 | 100% |  |  |  |  |  | Budic-DESAROLLADOR; Croci-DESAROLLADOR | 18h | 18h |
| 150 | 3.8.2 | Revision 2 | inactive | 3h? | 2015-09-06 | 2015-09-09 | 127 |  |  | 1.25d | 0d |  |  | Budic-DESAROLLADOR; Croci-DESAROLLADOR | 6h |  |
| 151 | 3.8.3 | Revision 3 | inactive | 3h? | 2015-10-11 | 2015-10-11 | 133 |  |  | 2.58d | 0d |  | AsociateYaContingencia | Budic-DESAROLLADOR; Croci-DESAROLLADOR | 6h |  |
| 152 | 3.8.4 | Revision 4 | inactive | 3h? | 2015-11-01 | 2015-11-01 | 137 |  |  | 2.58d |  |  | AsociateYaContingencia | Budic-DESAROLLADOR; Croci-DESAROLLADOR | 6h |  |
| 153 | 3.9 | **Revisión de pares de PHP** |  | 10.35d? | 2015-06-19 A | 2015-11-09 |  | 66% | 3.56d? | 0.48d |  |  |  |  | 50h | 28h |
| 154 | 3.9.1 | Revision 1 |  | 8h? | 2015-06-19 A | 2015-07-09 | 96 | 88% | 1h? | 9.37d |  |  |  | Budic-DESAROLLADOR; Croci-DESAROLLADOR | 16h | 14h |
| 155 | 3.9.2 | Revision 2 |  | 14h? | 2015-07-19 A | 2015-11-09 A | 102 | 100% |  |  |  |  |  | Budic-DESAROLLADOR; Croci-DESAROLLADOR | 14h | 14h |
| 156 | 3.9.3 | Revision 3 |  | 5h? | 2015-10-18 | 2015-10-19 | 108 |  |  | 4.05d |  |  | AsociateYaContingencia | Budic-DESAROLLADOR; Croci-DESAROLLADOR | 10h |  |
| 157 | 3.9.4 | Revision 4 |  | 5h? | 2015-10-30 | 2015-10-31 | 112 |  |  | 0d |  |  | AsociateYaContingencia | Budic-DESAROLLADOR; Croci-DESAROLLADOR | 10h |  |
| 158 | 3.10 | **Promoción** |  | 0.62d | 2015-07-22 A | 2015-08-01 A |  | 100% |  |  |  |  |  |  | 28h | 28h |
| 159 | 3.10.1 | Realizar presentación comercial |  | 10h | 2015-07-26 A | 2015-08-01 A | 160 | 100% |  |  |  |  |  | Croci-ANALISTA FUNCIONAL; Croci-DISEÑADOR DE EXPERIENCIA DE USUARIO; Budic-PROJECT MANAGER | 20h | 20h |
| 160 | 3.10.2 | Realizar poster comercial |  | 8h | 2015-07-22 A | 2015-07-26 A | 31 | 100% |  |  |  | start no earlier than 2015-07-22 |  | Croci-DISEÑADOR DE EXPERIENCIA DE USUARIO | 8h | 8h |
| 161 | 4 | **Testing** |  | 10.67d | 2015-06-21 A | 2015-11-15 |  | 43% | 6.08d | 0d |  |  |  |  | 62h | 32h |
| 162 | 4.1 | Armar el plan de pruebas |  | 8h | 2015-06-28 A | 2015-07-04 A | 163 | 100% |  |  |  |  |  | Croci-ANALISTA FUNCIONAL; Budic-PROJECT MANAGER | 16h | 16h |
| 163 | 4.2 | Definir los casos de prueba |  | 14.6h | 2015-06-21 A | 2015-06-28 A | 26, 30 | 100% |  |  |  |  |  | Croci-ANALISTA FUNCIONAL; Budic-PROJECT MANAGER | 16h | 16h |
| 164 | 4.3 | Ejecutar los casos de prueba |  | 20h | 2015-11-08 | 2015-11-14 | 163, 50, 71, 94, 116 |  |  | 0d |  |  | AsociateYaContingencia | Budic-TESTER | 20h |  |
| 165 | 4.4 | Documentar resultados de las pruebas |  | 10h | 2015-11-14 | 2015-11-15 | 164 |  |  | 0d |  |  | AsociateYaContingencia | Budic-TESTER | 10h |  |

| ID | WBS | Task | Duration | Start | Finish | Predecessors | Total slack | Free slack | Calendar | Resources | Work |
| --- | --- | --- | --- | --- | --- | --- | --- | --- | --- | --- | --- |
| 166 | 5 | **Manuales** | 0.01d | 2015-10-11 | 2015-10-11 |  | 2.6d |  |  |  | 6h |
| 167 | 5.1 | Redactar manual de uso y ayuda | 2h | 2015-10-11 | 2015-10-11 | 143, 148, 163 | 5.38d | 2.66d | AsociateYaContingencia | Tiberti-ADMINISTRADOR DE BASE DE DATOS; Tiberti-ADMINISTRADOR DEL ENTORNO DE DESARROLLO; Tiberti-DESAROLLADOR | 6h |
| 168 | 6 | **Finalización del Proyecto** | 0.56d | 2015-11-15 | 2015-11-21 |  | 0d |  | AsociateYaContingencia |  | 30h |
| 169 | 6.1 | Reflexionar sobre la experiencia realizada | 0.5h | 2015-11-15 | 2015-11-15 | 167, 165, 6, 12, 15, 17, 19, 21, 26, 30, 32, 34, 39, 153, 160 | 0d |  | AsociateYaContingencia | Tiberti-ADMINISTRADOR DE BASE DE DATOS; Tiberti-ADMINISTRADOR DEL ENTORNO DE DESARROLLO; Croci-ANALISTA FUNCIONAL; Rodriguez-ARQUITECTO DE SOFTWARE; Tiberti-DESAROLLADOR; Croci-DISEÑADOR DE EXPERIENCIA DE USUARIO; Budic-PROJECT MANAGER; Budic-TESTER | 4h |
| 170 | 6.2 | Analizar errores cometidos | 1h | 2015-11-15 | 2015-11-15 | 169 | 0d |  | AsociateYaContingencia | Tiberti-ADMINISTRADOR DE BASE DE DATOS; Tiberti-ADMINISTRADOR DEL ENTORNO DE DESARROLLO; Croci-ANALISTA FUNCIONAL; Rodriguez-ARQUITECTO DE SOFTWARE; Tiberti-DESAROLLADOR; Croci-DISEÑADOR DE EXPERIENCIA DE USUARIO; Budic-PROJECT MANAGER; Budic-TESTER | 8h |
| 171 | 6.3 | Documentación de cierre de proyecto | 6h | 2015-11-15 | 2015-11-18 | 170 | 0d |  | AsociateYaContingencia | Croci-ANALISTA FUNCIONAL; Budic-PROJECT MANAGER | 12h |
| 172 | 6.4 | Cerrar el proyecto | 6h | 2015-11-18 | 2015-11-21 | 171 | 0d |  | AsociateYaContingencia | Budic-PROJECT MANAGER | 6h |
