# Gantt AY Contingencia 2

Schedule from MS Project, 2015-04-12 to 2016-02-14, status date 2015-06-07, 24 hours a day, A marks actual dates.

## Calendars

- AsociateYa: Mon-Fri 09:00-13:00, 15:00-19:00; Sat-Sun off.
- AsociateYaContingencia: Mon-Fri 09:00-13:00, 15:00-19:00; Sat-Sun off.
- AsociateYa Febrero: Mon-Fri 09:00-13:00, 15:00-19:00; Sat-Sun off.
- AsociateYa Enero: Mon-Fri 09:00-13:00, 15:00-19:00; Sat-Sun off.

## Resources

| Resource | Group |
| --- | --- |
| Tiberti-ANALISTA FUNCIONAL | ANALISTA FUNCIONAL |
| Budic-PROJECT MANAGER | PROJECT MANAGER |
| Tiberti-ADMINISTRADOR DE BASE DE DATOS | ADMINISTRADOR DE BASE DE DATOS |
| Tiberti-DESAROLLADOR | DESAROLLADOR |
| Budic-TESTER | TESTER |
| Croci-DISEÑADOR DE EXPERIENCIA DE USUARIO | DISEÑADOR DE EXPERIENCIA DE USUARIO |
| Rodriguez-ARQUITECTO DE SOFTWARE | ARQUITECTO DE SOFTWARE |
| Tiberti-ADMINISTRADOR DEL ENTORNO DE DESARROLLO | ADMINISTRADOR DEL ENTORNO DE DESARROLLO |
| Croci-DESAROLLADOR | DESAROLLADOR |
| Budic-DESAROLLADOR | DESAROLLADOR |
| Rodriguez-DESAROLLADOR | DESAROLLADOR |
| Budic-ANALISTA FUNCIONAL | ANALISTA FUNCIONAL |
| Rodriguez-PROJECT CONTROLLER | PROJECT CONTROLLER |
| Tiberti-TESTER | TESTER |
| Tiberti-ANALISTA LEGAL | ANALISTA LEGAL |

## Schedule

| ID | WBS | Task | Type | Duration | Start | Finish | Predecessors | Complete | Constraint | Calendar | Resources | Work | Actual work |
| --- | --- | --- | --- | --- | --- | --- | --- | --- | --- | --- | --- | --- | --- |
| 1 | 1 | **Análisis** |  | 13.23d? | 2015-04-12 A | 2015-11-30 A |  | 100% |  |  |  | 142h | 142h |
| 2 | 1.1 | **Riesgos** |  | 0.71d | 2015-04-12 A | 2015-04-25 A |  | 100% |  |  |  | 39h | 39h |
| 3 | 1.1.1 | Identificar los riegos |  | 2h | 2015-04-12 A | 2015-04-12 A |  | 100% |  |  | Budic-PROJECT MANAGER; Tiberti-ADMINISTRADOR DE BASE DE DATOS; Rodriguez-ARQUITECTO DE SOFTWARE; Rodriguez-PROJECT CONTROLLER; Budic-ANALISTA FUNCIONAL; Croci-DESAROLLADOR | 11h | 11h |
| 4 | 1.1.2 | Analizar los riegos |  | 3h | 2015-04-12 A | 2015-04-18 A | 3 | 100% |  |  | Budic-PROJECT MANAGER; Tiberti-ADMINISTRADOR DE BASE DE DATOS; Rodriguez-ARQUITECTO DE SOFTWARE; Rodriguez-PROJECT CONTROLLER; Budic-ANALISTA FUNCIONAL; Croci-DESAROLLADOR | 12h | 12h |
| 5 | 1.1.3 | Planificación de riesgos |  | 6h | 2015-04-18 A | 2015-04-25 A | 4 | 100% |  |  | Budic-PROJECT MANAGER; Rodriguez-PROJECT CONTROLLER; Budic-ANALISTA FUNCIONAL | 14h | 14h |
| 6 | 1.1.4 | Completar tabla de riesgos |  | 1h | 2015-04-25 A | 2015-04-25 A | 5 | 100% |  |  | Budic-PROJECT MANAGER; Rodriguez-PROJECT CONTROLLER | 2h | 2h |
| 7 | 1.2 | **Planificación** |  | 12.08d? | 2015-05-02 A | 2015-11-30 A |  | 100% |  |  |  | 72h | 72h |
| 8 | 1.2.1 | Identificar las tareas para cada entregable |  | 11.99h | 2015-05-02 A | 2015-05-10 A | 24 | 100% | finish no earlier than 2015-05-10 |  | Budic-PROJECT MANAGER | 11.99h | 11.99h |
| 9 | 1.2.2 | Definir las precedencias |  | 4h | 2015-05-10 A | 2015-05-16 A | 8 | 100% |  |  | Budic-PROJECT MANAGER | 4h | 4h |
| 10 | 1.2.3 | Estimar los tiempos de cada tarea |  | 6h | 2015-05-16 A | 2015-05-17 A | 9 | 100% |  |  | Budic-PROJECT MANAGER; Tiberti-ADMINISTRADOR DE BASE DE DATOS; Tiberti-ADMINISTRADOR DEL ENTORNO DE DESARROLLO; Tiberti-ANALISTA FUNCIONAL; Rodriguez-ARQUITECTO DE SOFTWARE; Budic-TESTER; Croci-DISEÑADOR DE EXPERIENCIA DE USUARIO | 17h | 17h |
| 11 | 1.2.4 | Calcular el camino crítico |  | 3h | 2015-05-30 A | 2015-05-30 A | 12 | 100% |  |  | Rodriguez-PROJECT CONTROLLER | 3h | 3h |
| 12 | 1.2.5 | Realizar diagrama de Gantt |  | 25h | 2015-05-17 A | 2015-05-26 A | 10 | 100% |  | AsociateYaContingencia | Rodriguez-PROJECT CONTROLLER | 25h | 25h |
| 13 | 1.2.6 | Inicio de Replanificación | milestone | 0h | 2015-11-26 A | 2015-11-26 A | 32 | 100% |  | AsociateYa Febrero |  |  |  |
| 14 | 1.2.7 | Estimar los tiempos de cada tarea |  | 1h? | 2015-11-27 A | 2015-11-28 A | 13 | 100% |  | AsociateYa Febrero | Croci-DESAROLLADOR; Budic-DESAROLLADOR; Rodriguez-DESAROLLADOR; Tiberti-ANALISTA FUNCIONAL | 4h | 4h |
| 15 | 1.2.8 | Realizar diagrama de Gantt |  | 7h? | 2015-11-28 A | 2015-11-30 A | 14 | 100% |  | AsociateYa Febrero | Rodriguez-PROJECT CONTROLLER | 7h | 7h |
| 16 | 1.3 | **Roles y Responsabilidades** |  | 0.21d | 2015-05-30 A | 2015-05-31 A |  | 100% |  |  |  | 7h | 7h |
| 17 | 1.3.1 | Identificar roles |  | 2h | 2015-05-30 A | 2015-05-30 A | 12 | 100% |  |  | Budic-PROJECT MANAGER; Tiberti-ANALISTA FUNCIONAL | 4h | 4h |
| 18 | 1.3.2 | Asignar responsabilidades a los roles |  | 3h | 2015-05-30 A | 2015-05-31 A | 17 | 100% |  |  | Budic-PROJECT MANAGER | 3h | 3h |
| 19 | 1.4 | **Habilidades y Competencias** |  | 0.35d | 2015-05-31 A | 2015-06-07 A |  | 100% |  |  |  | 6h | 6h |
| 20 | 1.4.1 | Asignar competencias a los roles |  | 6h | 2015-05-31 A | 2015-06-07 A | 18 | 100% |  |  | Budic-PROJECT MANAGER | 6h | 6h |
| 21 | 1.5 | **Comunicación** |  | 0.08d | 2015-06-07 A | 2015-06-07 A |  | 100% |  |  |  | 2h | 2h |
| 22 | 1.5.1 | Establecer canales de comunicación entre roles |  | 2h | 2015-06-07 A | 2015-06-07 A | 20 | 100% |  |  | Budic-PROJECT MANAGER | 2h | 2h |
| 23 | 1.6 | **WBS** |  | 0.44d | 2015-04-25 A | 2015-05-02 A |  | 100% |  |  |  | 16h | 16h |
| 24 | 1.6.1 | Definir entregables |  | 8h | 2015-04-25 A | 2015-05-02 A | 6 | 100% |  |  | Budic-PROJECT MANAGER; Tiberti-ANALISTA FUNCIONAL | 16h | 16h |

| ID | WBS | Task | Type | Duration | Start | Finish | Predecessors | Complete | Remaining | Total slack | Constraint | Calendar | Resources | Work | Actual work |
| --- | --- | --- | --- | --- | --- | --- | --- | --- | --- | --- | --- | --- | --- | --- | --- |
| 25 | 2 | **Diseño** |  | 12d? | 2015-05-10 A | 2015-12-06 |  | 95% | 0.61d? | 0d |  |  |  | 230h | 214h |
| 26 | 2.1 | **Casos de Uso** |  | 10.04d? | 2015-05-31 A | 2015-11-26 A |  | 100% |  |  |  |  |  | 121h | 121h |
| 27 | 2.1.1 | Identificar actores y funcionalidades |  | 25h | 2015-05-31 A | 2015-06-27 A | 24, 16 | 100% |  |  |  |  | Tiberti-ANALISTA FUNCIONAL; Budic-ANALISTA FUNCIONAL | 50h | 50h |
| 28 | 2.1.2 | Describir casos de uso |  | 48h | 2015-06-27 A | 2015-08-15 A | 27 | 100% |  |  |  |  | Tiberti-ANALISTA FUNCIONAL; Budic-PROJECT MANAGER | 50h | 50h |
| 29 | 2.1.3 | Describir las relaciones entre los actores y casos de uso |  | 9h | 2015-08-15 A | 2015-08-29 A | 27, 28 | 100% |  |  |  |  | Tiberti-ANALISTA FUNCIONAL; Budic-ANALISTA FUNCIONAL | 10h | 10h |
| 30 | 2.1.4 | Inicio Replanificacion de casos de uso | milestone | 0h? | 2015-11-17 A | 2015-11-17 A |  | 100% |  |  | start no earlier than 2015-11-17 | AsociateYa Febrero |  |  |  |
| 31 | 2.1.5 | Identificar actores y funcionalidades |  | 3h | 2015-11-17 A | 2015-11-21 A | 30 | 100% |  |  |  | AsociateYa Febrero | Tiberti-ANALISTA FUNCIONAL | 3h | 3h |
| 32 | 2.1.6 | Describir casos de uso |  | 8h | 2015-11-21 A | 2015-11-26 A | 31 | 100% |  |  |  | AsociateYa Febrero | Tiberti-ANALISTA FUNCIONAL | 8h | 8h |
| 33 | 2.2 | **DER** |  | 9.27d? | 2015-06-27 A | 2015-12-06 |  | 73% | 2.47d? | 0d |  |  |  | 54h | 38h |
| 34 | 2.2.1 | Definir entidades y sus atributos |  | 8h | 2015-06-27 A | 2015-07-04 A | 27 | 100% |  |  |  |  | Tiberti-ADMINISTRADOR DE BASE DE DATOS; Tiberti-ANALISTA FUNCIONAL; Rodriguez-ARQUITECTO DE SOFTWARE; Budic-PROJECT MANAGER | 24h | 24h |
| 35 | 2.2.2 | Describir las relaciones entre las entidades |  | 8h | 2015-07-05 A | 2015-08-08 A | 34 | 100% |  |  |  |  | Tiberti-ADMINISTRADOR DE BASE DE DATOS; Tiberti-ANALISTA FUNCIONAL | 8h | 8h |
| 36 | 2.2.3 | Normalizar DER |  | 6h | 2015-08-09 A | 2015-08-15 A | 35 | 100% |  |  |  |  | Tiberti-ADMINISTRADOR DE BASE DE DATOS | 6h | 6h |
| 37 | 2.2.4 | Inicio Replanificación de DER | milestone | 0h | 2015-11-30 | 2015-11-30 | 15 |  |  | 0.02d |  | AsociateYa Febrero |  |  |  |
| 38 | 2.2.5 | Definir entidades y sus atributos |  | 4h? | 2015-12-01 | 2015-12-05 | 37 |  |  | 0d |  | AsociateYa Febrero | Tiberti-ADMINISTRADOR DE BASE DE DATOS; Tiberti-ANALISTA FUNCIONAL; Rodriguez-ARQUITECTO DE SOFTWARE; Budic-PROJECT MANAGER | 12h |  |
| 39 | 2.2.6 | Describir las relaciones entre las entidades |  | 4h? | 2015-12-05 | 2015-12-06 | 38 |  |  | 0d |  | AsociateYa Febrero | Tiberti-ADMINISTRADOR DE BASE DE DATOS | 4h |  |
| 40 | 2.3 | **Maqueta del Front-End** |  | 0.52d | 2015-08-15 A | 2015-08-23 A |  | 100% |  |  |  |  |  | 10h | 10h |
| 41 | 2.3.1 | Diseñar disposición de elementos estéticamente |  | 10h | 2015-08-15 A | 2015-08-23 A | 36 | 100% |  |  |  |  | Croci-DISEÑADOR DE EXPERIENCIA DE USUARIO | 10h | 10h |
| 42 | 2.4 | **Documento De Arquitectura** |  | 0.44d | 2015-05-10 A | 2015-05-17 A |  | 100% |  |  |  |  |  | 8h | 8h |
| 43 | 2.4.1 | Definir arquitectura de software |  | 8h | 2015-05-10 A | 2015-05-17 A | 8 | 100% |  |  |  |  | Rodriguez-ARQUITECTO DE SOFTWARE | 8h | 8h |
| 44 | 2.5 | **Especificación de la BD** |  | 0.92d | 2015-08-29 A | 2015-09-13 A |  | 100% |  |  |  |  |  | 37h | 37h |
| 45 | 2.5.1 | Diseño de tablas de la BD |  | 6h | 2015-08-29 A | 2015-08-30 A | 36, 29 | 100% |  |  |  |  | Tiberti-ADMINISTRADOR DE BASE DE DATOS; Tiberti-ANALISTA FUNCIONAL; Rodriguez-ARQUITECTO DE SOFTWARE | 18h | 18h |
| 46 | 2.5.2 | Definir tipo y volumen de datos |  | 3h | 2015-09-05 A | 2015-09-06 A | 47 | 100% |  |  |  |  | Tiberti-ADMINISTRADOR DE BASE DE DATOS | 3h | 3h |
| 47 | 2.5.3 | Relaciones entre las tablas de la BD |  | 3h | 2015-08-30 A | 2015-09-05 A | 45 | 100% |  |  |  |  | Tiberti-ADMINISTRADOR DE BASE DE DATOS | 3h | 3h |
| 48 | 2.5.4 | Definir políticas de seguridad e integridad |  | 5h | 2015-09-06 A | 2015-09-13 A | 46 | 100% |  |  |  |  | Tiberti-ADMINISTRADOR DE BASE DE DATOS; Tiberti-ANALISTA FUNCIONAL; Rodriguez-ARQUITECTO DE SOFTWARE | 13h | 13h |

| ID | WBS | Task | Type | Duration | Start | Finish | Predecessors | Complete | Remaining | Total slack | Free slack | Calendar | Resources | Work | Actual work |
| --- | --- | --- | --- | --- | --- | --- | --- | --- | --- | --- | --- | --- | --- | --- | --- |
| 49 | 3 | **Desarrollo** |  | 18.21d? | 2015-05-17 A | 2016-01-24 |  | 87% | 2.38d? | 5d |  |  |  | 1044h | 891h |
| 50 | 3.1 | **Capacitacion** |  | 6.21d? | 2015-05-17 A | 2015-09-05 A |  | 100% |  |  |  |  |  | 290h | 290h |
| 51 | 3.1.1 | Inicio Capacitación en HTML |  | 10h | 2015-05-17 A | 2015-05-30 A | 43 | 100% |  |  |  |  | Budic-DESAROLLADOR | 10h | 10h |
| 52 | 3.1.2 | Inicio Capacitación en CSS |  | 10h | 2015-05-17 A | 2015-05-30 A | 43 | 100% |  |  |  |  | Budic-DESAROLLADOR | 10h | 10h |
| 53 | 3.1.3 | Inicio Capacitación en PHP |  | 20h | 2015-05-17 A | 2015-06-07 A | 43 | 100% |  |  |  |  | Rodriguez-DESAROLLADOR; Croci-DESAROLLADOR | 40h | 40h |
| 54 | 3.1.4 | Capacitación en HTML |  | 20h | 2015-05-30 A | 2015-07-19 A | 51 | 100% |  |  |  |  | Budic-DESAROLLADOR | 20h | 20h |
| 55 | 3.1.5 | Capacitación en CSS |  | 20h | 2015-05-30 A | 2015-06-27 A | 52 | 100% |  |  |  |  | Budic-DESAROLLADOR | 20h | 20h |
| 56 | 3.1.6 | Capacitación en PHP |  | 70h | 2015-06-07 A | 2015-09-05 A | 53 | 100% |  |  |  |  | Rodriguez-DESAROLLADOR | 70h | 70h |
| 57 | 3.1.7 | Capacitacion Symfony |  | 61.97h? | 2015-06-07 A | 2015-08-23 A | 51, 52, 53 | 100% |  |  |  |  | Budic-DESAROLLADOR; Croci-DESAROLLADOR; Rodriguez-DESAROLLADOR; Tiberti-DESAROLLADOR | 120h | 120h |
| 58 | 3.2 | **Escribir código de Plantillas** |  | 14.25d? | 2015-05-30 A | 2016-01-10 |  | 68% | 4.54d? | 3.33d |  |  |  | 160h | 101h |
| 59 | 3.2.1 | Inscribirse al portal |  | 10h? | 2015-05-30 A | 2015-06-13 A | 51, 52 | 100% |  |  |  |  | Budic-DESAROLLADOR; Croci-DESAROLLADOR | 10h | 10h |
| 60 | 3.2.2 | Autenticarse como usuario |  | 10h? | 2015-06-13 A | 2015-07-12 A | 59 | 100% |  |  |  |  | Budic-DESAROLLADOR; Croci-DESAROLLADOR | 10h | 10h |
| 61 | 3.2.3 | Modificar Usuario |  | 8h? | 2015-07-12 A | 2015-07-19 A | 60 | 100% |  |  |  |  | Budic-DESAROLLADOR; Croci-DESAROLLADOR | 10h | 10h |
| 62 | 3.2.4 | Dar de baja Usuario |  | 6h? | 2015-07-19 A | 2015-07-26 A | 61 | 100% |  |  |  |  | Budic-DESAROLLADOR; Croci-DESAROLLADOR | 6h | 6h |
| 63 | 3.2.5 | Inscribirse como emprendedor |  | 7h? | 2015-08-09 A | 2015-08-16 A | 104 | 100% |  |  |  |  | Budic-DESAROLLADOR; Croci-DESAROLLADOR | 7h | 7h |
| 64 | 3.2.6 | Aprobar inscripción como emprendedor |  | 5h? | 2015-08-16 A | 2015-09-05 A | 63 | 100% |  |  |  |  | Budic-DESAROLLADOR; Croci-DESAROLLADOR | 5h | 5h |
| 65 | 3.2.7 | Aplicar para crear emprendimiento |  | 5h? | 2015-09-05 A | 2015-09-06 A | 64 | 100% |  |  |  |  | Budic-DESAROLLADOR; Croci-DESAROLLADOR | 5h | 5h |
| 66 | 3.2.8 | Aprobar emprendimiento |  | 5.03h? | 2015-09-06 A | 2015-09-08 A | 65 | 100% |  |  |  | AsociateYaContingencia | Budic-DESAROLLADOR; Croci-DESAROLLADOR | 6h | 6h |
| 67 | 3.2.9 | Buscar/filtrar emprendimientos |  | 5h? | 2015-09-08 A | 2015-09-12 A | 66 | 100% |  |  |  | AsociateYaContingencia | Budic-DESAROLLADOR; Croci-DESAROLLADOR | 5h | 5h |
| 68 | 3.2.10 | Responder a inversor |  | 3h? | 2015-09-26 A | 2015-09-26 A | 105 | 100% |  |  |  | AsociateYaContingencia | Budic-DESAROLLADOR | 3h | 3h |
| 69 | 3.2.11 | Asociacion a emprendimiento |  | 4h? | 2015-09-26 A | 2015-09-27 A | 68 | 100% |  |  |  | AsociateYaContingencia | Budic-DESAROLLADOR | 4h | 4h |
| 70 | 3.2.12 | Consultar información a emprendedor |  | 8h? | 2015-09-27 A | 2015-10-10 A | 69 | 100% |  |  |  | AsociateYaContingencia | Budic-DESAROLLADOR; Croci-DESAROLLADOR | 8h | 8h |
| 71 | 3.2.13 | Realizar pago |  | 6h? | 2015-10-10 A | 2015-10-11 A | 70 | 100% |  |  |  | AsociateYaContingencia | Budic-DESAROLLADOR; Croci-DESAROLLADOR | 8h | 8h |
| 72 | 3.2.14 | Dar de baja emprendimiento (baja manual) |  | 6h? | 2015-10-11 A | 2015-10-17 A | 71 | 100% |  |  |  | AsociateYaContingencia | Budic-DESAROLLADOR; Croci-DESAROLLADOR | 8h | 8h |
| 73 | 3.2.15 | Cancelar emprendimiento (baja por tiempo) |  | 6h? | 2015-10-17 A | 2015-10-18 A | 72 | 100% |  |  |  | AsociateYaContingencia | Budic-DESAROLLADOR | 6h | 6h |
| 74 | 3.2.16 | Inicio Replanificacion de Plantillas | milestone | 0h? | 2015-12-06 | 2015-12-06 | 39 |  |  | 2.19d | 0d | AsociateYa Enero |  |  |  |
| 75 | 3.2.17 | Consultar información de inversiones (CU017) |  | 12h? | 2015-12-06 | 2015-12-16 | 74 |  |  | 0.9d | 0.02d | AsociateYa Febrero | Budic-DESAROLLADOR; Tiberti-DESAROLLADOR | 16h |  |
| 76 | 3.2.18 | Consultar información de emprendimientos (CU018) |  | 12h? | 2015-12-17 | 2015-12-26 | 75 |  |  | 0.88d | 0.06d | AsociateYa Febrero | Budic-DESAROLLADOR; Tiberti-DESAROLLADOR | 15h |  |
| 77 | 3.2.19 | Gestionar notificaciones (CU019) |  | 12h? | 2015-12-27 | 2016-01-04 | 108 |  |  | 0.96d | 0.33d | AsociateYa Febrero | Budic-DESAROLLADOR; Tiberti-DESAROLLADOR | 17h |  |
| 78 | 3.2.20 | Presentar estado de resultados (CU015) |  | 8h | 2016-01-05 | 2016-01-10 | 77 |  |  | 0.94d | 0d | AsociateYa Febrero | Budic-DESAROLLADOR; Tiberti-DESAROLLADOR | 11h |  |

| ID | WBS | Task | Type | Duration | Start | Finish | Predecessors | Complete | Remaining | Total slack | Calendar | Resources | Work | Actual work |
| --- | --- | --- | --- | --- | --- | --- | --- | --- | --- | --- | --- | --- | --- | --- |
| 79 | 3.3 | **Escribir código PHP** |  | 17.06d? | 2015-06-07 A | 2016-01-24 |  | 81% | 3.33d? | 0d |  |  | 360h | 284h |
| 80 | 3.3.1 | Inscribirse al portal |  | 20h? | 2015-06-07 A | 2015-06-27 A | 53 | 100% |  |  |  | Croci-DESAROLLADOR; Rodriguez-DESAROLLADOR | 24h | 24h |
| 81 | 3.3.2 | Autenticarse como usuario |  | 15h? | 2015-07-04 A | 2015-07-18 A | 114 | 100% |  |  |  | Croci-DESAROLLADOR; Rodriguez-DESAROLLADOR | 18h | 18h |
| 82 | 3.3.3 | Modificar Usuario |  | 10h? | 2015-07-18 A | 2015-07-26 A | 81 | 100% |  |  |  | Croci-DESAROLLADOR; Rodriguez-DESAROLLADOR | 12h | 12h |
| 83 | 3.3.4 | Dar de baja Usuario |  | 10h? | 2015-07-26 A | 2015-08-08 A | 82 | 100% |  |  |  | Croci-DESAROLLADOR; Rodriguez-DESAROLLADOR | 12h | 12h |
| 84 | 3.3.5 | Inscribirse como emprendedor |  | 10h? | 2015-08-08 A | 2015-08-16 A | 83 | 100% |  |  |  | Croci-DESAROLLADOR; Rodriguez-DESAROLLADOR | 12h | 12h |
| 85 | 3.3.6 | Aprobar inscripción como emprendedor |  | 10h? | 2015-08-16 A | 2015-08-23 A | 84 | 100% |  |  |  | Croci-DESAROLLADOR; Rodriguez-DESAROLLADOR | 12h | 12h |
| 86 | 3.3.7 | Aplicar para crear emprendimiento |  | 10h? | 2015-08-23 A | 2015-09-05 A | 85 | 100% |  |  |  | Croci-DESAROLLADOR; Rodriguez-DESAROLLADOR | 12h | 12h |
| 87 | 3.3.8 | Aprobar emprendimiento |  | 8h? | 2015-09-12 A | 2015-09-13 A | 115 | 100% |  |  | AsociateYaContingencia | Croci-DESAROLLADOR; Rodriguez-DESAROLLADOR | 10h | 10h |
| 88 | 3.3.9 | Buscar/filtrar emprendimientos |  | 10h? | 2015-09-13 A | 2015-09-19 A | 87 | 100% |  |  | AsociateYaContingencia | Croci-DESAROLLADOR; Rodriguez-DESAROLLADOR | 13h | 13h |
| 89 | 3.3.10 | Responder a inversor |  | 8h? | 2015-09-19 A | 2015-09-20 A | 88 | 100% |  |  | AsociateYaContingencia | Croci-DESAROLLADOR; Rodriguez-DESAROLLADOR | 10h | 10h |
| 90 | 3.3.11 | Asociar a emprendimiento |  | 15h? | 2015-09-20 A | 2015-09-26 A | 89 | 100% |  |  | AsociateYaContingencia | Croci-DESAROLLADOR; Rodriguez-DESAROLLADOR | 25h | 25h |
| 91 | 3.3.12 | Consultar información a emprendedor |  | 10h? | 2015-09-27 A | 2015-10-03 A | 116 | 100% |  |  | AsociateYaContingencia | Croci-DESAROLLADOR; Rodriguez-DESAROLLADOR | 13h | 13h |
| 92 | 3.3.13 | Realizar Pago |  | 42.01h? | 2015-10-03 A | 2015-10-17 A | 91 | 100% |  |  | AsociateYaContingencia | Croci-DESAROLLADOR; Rodriguez-DESAROLLADOR | 62h | 62h |
| 93 | 3.3.14 | Dar de baja empremdimiento (baja manual) |  | 20h? | 2015-10-17 A | 2015-10-24 A | 92 | 100% |  |  | AsociateYaContingencia | Croci-DESAROLLADOR; Rodriguez-DESAROLLADOR | 24h | 24h |
| 94 | 3.3.15 | Cancelar emprendimiento (baja por tiempo) |  | 24.99h? | 2015-10-24 A | 2015-11-01 A | 93 | 100% |  |  | AsociateYaContingencia | Rodriguez-DESAROLLADOR; Croci-DESAROLLADOR | 25h | 25h |
| 95 | 3.3.16 | Inicio Replanificacion de PHP | milestone | 0h? | 2015-12-06 | 2015-12-06 | 39 |  |  | 0d | AsociateYa Enero |  |  |  |
| 96 | 3.3.17 | Consultar información de inversiones (CU017) |  | 10h? | 2015-12-06 | 2015-12-13 | 95 |  |  | 0d | AsociateYa Enero | Croci-DESAROLLADOR; Rodriguez-DESAROLLADOR | 15h |  |
| 97 | 3.3.18 | Consultar información de emprendimientos (CU018) |  | 12h? | 2015-12-13 | 2015-12-27 | 96 |  |  | 0d | AsociateYa Enero | Croci-DESAROLLADOR; Rodriguez-DESAROLLADOR | 17h |  |
| 98 | 3.3.19 | Gestionar notificaciones (CU019) |  | 10h | 2015-12-27 | 2016-01-03 | 118 |  |  | 0d | AsociateYa Enero | Croci-DESAROLLADOR; Rodriguez-DESAROLLADOR | 12h |  |
| 99 | 3.3.20 | Validar Pago Realizado (CU020) |  | 10h? | 2016-01-03 | 2016-01-10 | 98 |  |  | 0d | AsociateYa Enero | Croci-DESAROLLADOR; Rodriguez-DESAROLLADOR | 14h |  |
| 100 | 3.3.21 | Presentar estado de resultados (CU015) |  | 12h? | 2016-01-16 | 2016-01-24 | 119 |  |  | 0d | AsociateYa Enero | Croci-DESAROLLADOR; Rodriguez-DESAROLLADOR | 18h |  |
| 101 | 3.4 | **Escribir script de la base de datos** |  | 1.15d? | 2015-09-13 A | 2015-10-03 A |  | 100% |  |  |  |  | 20h | 20h |
| 102 | 3.4.1 | Script inicial |  | 17h? | 2015-09-13 A | 2015-10-03 A | 48 | 100% |  |  |  | Rodriguez-DESAROLLADOR; Rodriguez-ARQUITECTO DE SOFTWARE; Tiberti-ADMINISTRADOR DE BASE DE DATOS | 20h | 20h |

| ID | WBS | Task | Duration | Start | Finish | Predecessors | Complete | Remaining | Total slack | Free slack | Constraint | Calendar | Resources | Work | Actual work |
| --- | --- | --- | --- | --- | --- | --- | --- | --- | --- | --- | --- | --- | --- | --- | --- |
| 103 | 3.5 | **Revisión de pares de Plantillas** | 10.8d? | 2015-07-26 A | 2016-01-10 |  | 73% | 2.94d? | 8.33d |  |  |  |  | 28h | 16h |
| 104 | 3.5.1 | Revision 1 | 4h? | 2015-07-26 A | 2015-08-09 A | 62 | 100% |  |  |  |  |  | Tiberti-DESAROLLADOR; Rodriguez-DESAROLLADOR | 4h | 4h |
| 105 | 3.5.2 | Revision 2 | 4h? | 2015-09-12 A | 2015-09-26 A | 67 | 100% |  |  |  |  |  | Tiberti-DESAROLLADOR; Rodriguez-DESAROLLADOR | 4h | 4h |
| 106 | 3.5.3 | Revision 3 | 4h? | 2015-10-17 A | 2015-10-18 A | 72 | 100% |  |  |  |  | AsociateYaContingencia | Tiberti-DESAROLLADOR; Rodriguez-DESAROLLADOR | 4h | 4h |
| 107 | 3.5.4 | Revision 4 | 4h? | 2015-10-18 A | 2015-10-27 A | 73 | 100% |  |  |  |  | AsociateYaContingencia | Croci-DESAROLLADOR; Rodriguez-DESAROLLADOR | 4h | 4h |
| 108 | 3.5.5 | Revision 5 (CU017 - CU018) | 2h? | 2015-12-27 | 2015-12-27 | 76 |  |  | 2.21d | 0d |  | AsociateYa Enero | Croci-DESAROLLADOR; Rodriguez-DESAROLLADOR | 4h |  |
| 109 | 3.5.6 | Revision 6 (CU019) | 0.08d? | 2016-01-09 | 2016-01-09 | 77 |  |  | 5.71d |  |  | AsociateYa Enero | Croci-DESAROLLADOR; Rodriguez-DESAROLLADOR | 4h |  |
| 110 | 3.5.7 | Revision 7 (CU015) | 2h? | 2016-01-10 | 2016-01-10 | 78 |  |  | 2.21d |  |  | AsociateYa Enero | Croci-DESAROLLADOR; Rodriguez-DESAROLLADOR | 4h |  |
| 111 | 3.6 | **Revisión de pares de la base de datos** | 1.71d? | 2015-10-03 A | 2015-11-01 A |  | 100% |  |  |  |  |  |  | 18h | 18h |
| 112 | 3.6.1 | Revision 1 | 14.02h? | 2015-10-03 A | 2015-11-01 A | 102 | 100% |  |  |  |  |  | Budic-DESAROLLADOR; Croci-DESAROLLADOR | 18h | 18h |
| 113 | 3.7 | **Revisión de pares de PHP** | 15.92d? | 2015-06-27 A | 2016-01-24 |  | 89% | 1.71d? | 0d |  |  |  |  | 48h | 42h |
| 114 | 3.7.1 | Revision 1 | 5h? | 2015-06-27 A | 2015-07-04 A | 80 | 100% |  |  |  |  |  | Tiberti-DESAROLLADOR; Rodriguez-DESAROLLADOR | 10h | 10h |
| 115 | 3.7.2 | Revision 2 | 6h? | 2015-09-05 A | 2015-09-12 A | 86 | 100% |  |  |  |  |  | Rodriguez-DESAROLLADOR; Tiberti-DESAROLLADOR | 12h | 12h |
| 116 | 3.7.3 | Revision 3 | 6h? | 2015-09-26 A | 2015-09-27 A | 90 | 100% |  |  |  |  | AsociateYaContingencia | Rodriguez-DESAROLLADOR; Tiberti-DESAROLLADOR | 12h | 12h |
| 117 | 3.7.4 | Revision 4 | 8h? | 2015-10-17 A | 2015-10-18 A | 92 | 100% |  |  |  |  | AsociateYaContingencia | Rodriguez-DESAROLLADOR; Tiberti-DESAROLLADOR | 8h | 8h |
| 118 | 3.7.5 | Revision 5 (CU017 - CU018) | 1h? | 2015-12-27 | 2015-12-27 | 97 |  |  | 0d |  |  | AsociateYa Enero | Rodriguez-DESAROLLADOR; Tiberti-DESAROLLADOR | 2h |  |
| 119 | 3.7.6 | Revision 6 (CU019 - CU020) | 1h? | 2016-01-16 | 2016-01-16 | 99 |  |  | 0d |  |  | AsociateYa Enero | Rodriguez-DESAROLLADOR; Tiberti-DESAROLLADOR | 2h |  |
| 120 | 3.7.7 | Revision 7 (CU015) | 1h? | 2016-01-24 | 2016-01-24 | 100 |  |  | 0d |  |  | AsociateYa Enero | Rodriguez-DESAROLLADOR; Tiberti-DESAROLLADOR | 2h |  |
| 121 | 3.8 | **Promoción** | 1.06d | 2015-08-23 A | 2015-09-12 A |  | 100% |  |  |  |  |  |  | 28h | 28h |
| 122 | 3.8.1 | Realizar presentación comercial | 10h | 2015-08-30 A | 2015-09-12 A | 123 | 100% |  |  |  |  |  | Tiberti-ANALISTA FUNCIONAL; Croci-DISEÑADOR DE EXPERIENCIA DE USUARIO; Budic-PROJECT MANAGER | 20h | 20h |
| 123 | 3.8.2 | Realizar poster comercial | 8h | 2015-08-23 A | 2015-08-30 A | 40 | 100% |  |  |  | start no earlier than 2015-07-22 |  | Croci-DISEÑADOR DE EXPERIENCIA DE USUARIO; Budic-PROJECT MANAGER | 8h | 8h |
| 124 | 3.9 | **Legales** | 1.85d? | 2015-09-13 A | 2015-10-17 A |  | 100% |  |  |  |  |  |  | 92h | 92h |
| 125 | 3.9.1 | Desarrollar contrato Fideicomiso | 40h? | 2015-09-20 A | 2015-10-04 A | 128 | 100% |  |  |  |  |  | Tiberti-ANALISTA LEGAL | 40h | 40h |
| 126 | 3.9.2 | Desarrollar contrato de inversion | 12h? | 2015-10-04 A | 2015-10-10 A | 128 | 100% |  |  |  |  |  | Tiberti-ANALISTA LEGAL | 12h | 12h |
| 127 | 3.9.3 | Desarrollar términos y condiciones | 20h? | 2015-10-10 A | 2015-10-17 A | 125, 126 | 100% |  |  |  |  |  | Tiberti-ANALISTA LEGAL | 20h | 20h |
| 128 | 3.9.4 | Desarrollar reglas de negocio y aspectos legales | 20h? | 2015-09-13 A | 2015-09-20 A | 25 | 100% |  |  |  |  |  | Tiberti-ANALISTA LEGAL | 20h | 20h |

| ID | WBS | Task | Type | Duration | Start | Finish | Predecessors | Complete | Remaining | Total slack | Free slack | Calendar | Resources | Work | Actual work |
| --- | --- | --- | --- | --- | --- | --- | --- | --- | --- | --- | --- | --- | --- | --- | --- |
| 129 | 4 | **Testing** |  | 23.56d? | 2015-04-12 A | 2016-02-07 |  | 55% | 10.65d? | 1.67d |  |  |  | 111h | 60h |
| 130 | 4.1 | Armar el plan de pruebas |  | 12h | 2015-09-06 A | 2015-09-20 A | 131 | 100% |  |  |  |  | Tiberti-ANALISTA FUNCIONAL; Budic-PROJECT MANAGER | 20h | 20h |
| 131 | 4.2 | Definir los casos de prueba |  | 13.6h | 2015-08-29 A | 2015-09-06 A | 29, 36 | 100% |  |  |  |  | Tiberti-ANALISTA FUNCIONAL; Budic-PROJECT MANAGER | 16h | 16h |
| 132 | 4.3 | Inicio Replanificacion Testing | milestone | 0h? | 2015-12-06 | 2015-12-06 | 39 |  |  | 4.12d | 0d | AsociateYa Febrero |  |  |  |
| 133 | 4.4 | Armar el plan de pruebas |  | 6h? | 2015-12-06 | 2015-12-12 | 132 |  |  | 4.08d | 0d | AsociateYa Febrero | Tiberti-ANALISTA FUNCIONAL | 6h |  |
| 134 | 4.5 | Definir los casos de prueba |  | 10h? | 2015-12-12 | 2015-12-19 | 133 |  |  | 4.08d |  | AsociateYa Febrero | Tiberti-ANALISTA FUNCIONAL | 10h |  |
| 135 | 4.6 | **Ejecutar los casos de prueba** |  | 11.25d? | 2015-11-07 A | 2016-02-07 |  | 44% | 6.25d? | 0d |  | AsociateYaContingencia |  | 48h | 18h |
| 136 | 4.6.1 | Ciclo #1 |  | 4h? | 2015-11-07 A | 2015-11-08 A | 106, 112, 117 | 100% |  |  |  |  | Budic-TESTER; Tiberti-TESTER | 6h | 6h |
| 137 | 4.6.2 | Ciclo #2 |  | 4h? | 2015-11-08 A | 2015-11-08 A | 146 | 100% |  |  |  |  | Budic-TESTER; Tiberti-TESTER | 6h | 6h |
| 138 | 4.6.3 | Ciclo #3 |  | 4h? | 2015-11-08 A | 2015-11-11 A | 147 | 100% |  |  |  |  | Budic-TESTER; Tiberti-TESTER | 6h | 6h |
| 139 | 4.6.4 | Inicio Replanificacion de ejecución casos de prueba | milestone | 0h | 2016-01-24 | 2016-01-24 | 110, 120 |  |  | 0d |  | AsociateYa Enero |  |  |  |
| 140 | 4.6.5 | Ciclo #4 |  | 3h? | 2016-01-24 | 2016-01-30 | 139 |  |  | 0d |  | AsociateYa Enero | Budic-TESTER; Tiberti-TESTER | 6h |  |
| 141 | 4.6.6 | Ciclo #5 |  | 3h? | 2016-01-30 | 2016-01-31 | 150 |  |  | 0d |  | AsociateYa Enero | Budic-TESTER; Tiberti-TESTER | 6h |  |
| 142 | 4.6.7 | Ciclo #6 |  | 3h? | 2016-01-31 | 2016-01-31 | 151 |  |  | 0d |  | AsociateYa Enero | Budic-TESTER; Tiberti-TESTER | 6h |  |
| 143 | 4.6.8 | Ciclo #7 |  | 3h? | 2016-02-06 | 2016-02-07 | 152 |  |  | 0d |  | AsociateYa Enero | Budic-TESTER; Tiberti-TESTER | 6h |  |
| 144 | 4.6.9 | Ciclo #8 |  | 3h? | 2016-02-07 | 2016-02-07 | 153 |  |  | 0d |  | AsociateYa Enero | Budic-TESTER; Tiberti-TESTER | 6h |  |
| 145 | 4.7 | **Documentar resultados de las pruebas** |  | 36.15d? | 2015-04-12 A | 2016-02-07 |  | 55% | 16.43d? | 0.69d |  | AsociateYaContingencia |  | 11h | 6h |
| 146 | 4.7.1 | Ciclo #1 |  | 1h? | 2015-11-08 A | 2015-11-08 A | 136 | 100% |  |  |  |  | Budic-TESTER; Tiberti-TESTER | 2h | 2h |
| 147 | 4.7.2 | Ciclo #2 |  | 1h? | 2015-11-08 A | 2015-11-08 A | 137 | 100% |  |  |  |  | Budic-TESTER; Tiberti-TESTER | 2h | 2h |
| 148 | 4.7.3 | Ciclo #3 |  | 1h? | 2015-11-11 A | 2015-11-12 A | 138 | 100% |  |  |  |  | Budic-TESTER; Tiberti-TESTER | 2h | 2h |
| 149 | 4.7.4 | Inicio Replanificacion de documentación de pruebas | milestone | 0h | 2015-04-12 | 2015-04-12 |  |  |  | 65.29d |  | AsociateYa Enero |  |  |  |
| 150 | 4.7.5 | Ciclo #4 |  | 0.5h? | 2016-01-30 | 2016-01-30 | 140 |  |  | 0d |  | AsociateYa Enero | Budic-TESTER; Tiberti-TESTER | 1h |  |
| 151 | 4.7.6 | Ciclo #5 |  | 0.5h? | 2016-01-31 | 2016-01-31 | 141 |  |  | 0d |  | AsociateYa Enero | Budic-TESTER; Tiberti-TESTER | 1h |  |
| 152 | 4.7.7 | Ciclo #6 |  | 0.5h? | 2016-02-06 | 2016-02-06 | 142 |  |  | 0d |  | AsociateYa Enero | Budic-TESTER; Tiberti-TESTER | 1h |  |
| 153 | 4.7.8 | Ciclo #7 |  | 0.5h? | 2016-02-07 | 2016-02-07 | 143 |  |  | 0d |  | AsociateYa Enero | Budic-TESTER; Tiberti-TESTER | 1h |  |
| 154 | 4.7.9 | Ciclo #8 |  | 0.5h? | 2016-02-07 | 2016-02-07 | 144 |  |  | 0d |  | AsociateYa Enero | Budic-TESTER; Tiberti-TESTER | 1h |  |

| ID | WBS | Task | Duration | Start | Finish | Predecessors | Total slack | Calendar | Resources | Work |
| --- | --- | --- | --- | --- | --- | --- | --- | --- | --- | --- |
| 155 | 5 | **Manuales** | 1.67d | 2016-02-07 | 2016-02-13 |  | 0d |  |  | 10h |
| 156 | 5.1 | Redactar manual de usuario | 10h | 2016-02-07 | 2016-02-13 | 154 | 0d | AsociateYaContingencia | Croci-DISEÑADOR DE EXPERIENCIA DE USUARIO | 10h |
| 157 | 6 | **Finalización del Proyecto** | 0.27d | 2016-02-13 | 2016-02-14 |  | 0d | AsociateYaContingencia |  | 22h |
| 158 | 6.1 | Analizar errores cometidos | 1h | 2016-02-13 | 2016-02-13 | 6, 12, 18, 20, 22, 24, 29, 36, 41, 43, 48, 113, 123, 154, 156 | 0d | AsociateYaContingencia | Tiberti-ADMINISTRADOR DE BASE DE DATOS; Tiberti-ADMINISTRADOR DEL ENTORNO DE DESARROLLO; Tiberti-ANALISTA FUNCIONAL; Rodriguez-ARQUITECTO DE SOFTWARE; Tiberti-DESAROLLADOR; Croci-DISEÑADOR DE EXPERIENCIA DE USUARIO; Budic-PROJECT MANAGER; Budic-TESTER | 8h |
| 159 | 6.2 | Reflexionar sobre la experiencia realizada | 0.5h | 2016-02-13 | 2016-02-13 | 158 | 0d | AsociateYaContingencia | Tiberti-ADMINISTRADOR DE BASE DE DATOS; Tiberti-ADMINISTRADOR DEL ENTORNO DE DESARROLLO; Tiberti-ANALISTA FUNCIONAL; Rodriguez-ARQUITECTO DE SOFTWARE; Tiberti-DESAROLLADOR; Croci-DISEÑADOR DE EXPERIENCIA DE USUARIO; Budic-PROJECT MANAGER; Budic-TESTER | 4h |
| 160 | 6.3 | Documentación de cierre de proyecto | 5h | 2016-02-13 | 2016-02-14 | 159 | 0d | AsociateYaContingencia | Tiberti-ANALISTA FUNCIONAL; Budic-PROJECT MANAGER | 10h |
