# Gantt2.0

Schedule from MS Project, 2015-04-12 to 2015-11-21, status date 2015-06-07, 5 hours a day, A marks actual dates.

## Calendars

- AsociateYa: Mon-Fri 09:00-13:00, 15:00-19:00; Sat-Sun off.

## Resources

| Resource | Group |
| --- | --- |
| Croci-ANALISTA FUNCIONAL | ANALISTA FUNCIONAL |
| Budic-PROJECT MANAGER | PROJECT MANAGER |
| Tiberti-ADMINISTRADOR DE BASE DE DATOS | ADMINISTRADOR DE BASE DE DATOS |
| Tiberti-DESAROLLADOR | DESAROLLADOR |
| Budic-TESTER | TESTER |
| Croci-DISEÑADOR DE EXPERIENCIA DE USUARIO | DISEÑADOR DE EXPERIENCIA DE USUARIO |
| Rodriguez-ARQUITECTO DE SOFTWARE | ARQUITECTO DE SOFTWARE |
| Tiberti-ADMINISTRADOR DEL ENTORNO DE DESARROLLO | ADMINISTRADOR DEL ENTORNO DE DESARROLLO |
| Croci-DESAROLLADOR | DESAROLLADOR |
| Budic-DESAROLLADOR | DESAROLLADOR |
| Rodriguez-DESAROLLADOR | DESAROLLADOR |
| Budic-ANALISTA FUNCIONAL | ANALISTA FUNCIONAL |
| Rodriguez-PROJECT CONTROLLER | PROJECT CONTROLLER |

## Schedule

| ID | WBS | Task | Duration | Start | Finish | Predecessors | Complete | Remaining | Total slack | Free slack | Resources | Work | Actual work |
| --- | --- | --- | --- | --- | --- | --- | --- | --- | --- | --- | --- | --- | --- |
| 1 | 1 | **Análisis** | 15d | 2015-04-12 A | 2015-05-17 |  | 89% | 1.58d | 77.8d |  |  | 124h | 114.8h |
| 2 | 1.1 | **Riesgos** | 2.4d | 2015-04-12 A | 2015-04-18 A |  | 100% |  |  |  |  | 39h | 39h |
| 3 | 1.1.1 | Identificar los riegos | 2h | 2015-04-12 A | 2015-04-12 A |  | 100% |  |  |  | Budic-PROJECT MANAGER; Tiberti-ADMINISTRADOR DE BASE DE DATOS; Rodriguez-ARQUITECTO DE SOFTWARE; Rodriguez-PROJECT CONTROLLER; Budic-ANALISTA FUNCIONAL; Croci-DESAROLLADOR | 11h | 11h |
| 4 | 1.1.2 | Analizar los riegos | 3h | 2015-04-12 A | 2015-04-12 A | 3 | 100% |  |  |  | Budic-PROJECT MANAGER; Tiberti-ADMINISTRADOR DE BASE DE DATOS; Rodriguez-ARQUITECTO DE SOFTWARE; Rodriguez-PROJECT CONTROLLER; Budic-ANALISTA FUNCIONAL; Croci-DESAROLLADOR | 12h | 12h |
| 5 | 1.1.3 | Planificación de riesgos | 6h | 2015-04-12 A | 2015-04-18 A | 4 | 100% |  |  |  | Budic-PROJECT MANAGER; Rodriguez-PROJECT CONTROLLER; Budic-ANALISTA FUNCIONAL | 14h | 14h |
| 6 | 1.1.4 | Completar tabla de riesgos | 1h | 2015-04-18 A | 2015-04-18 A | 5 | 100% |  |  |  | Budic-PROJECT MANAGER; Rodriguez-PROJECT CONTROLLER | 2h | 2h |
| 7 | 1.2 | **Planificación** | 9d | 2015-04-19 A | 2015-05-10 |  | 81% | 1.67d | 79.8d |  |  | 54h | 44.8h |
| 8 | 1.2.1 | Identificar las tareas para cada entregable | 8h | 2015-04-19 A | 2015-04-25 | 21 | 80% | 1.6h | 0.64d | 0d | Budic-PROJECT MANAGER | 8h | 6.4h |
| 9 | 1.2.2 | Definir las precedencias | 4h | 2015-04-25 A | 2015-04-26 | 8 | 80% | 0.8h | 0.48d | 0d | Budic-PROJECT MANAGER | 4h | 3.2h |
| 10 | 1.2.3 | Estimar los tiempos de cada tarea | 3h | 2015-04-26 A | 2015-04-26 | 9 | 80% | 0.6h | 4.4d | 0.4d | Budic-PROJECT MANAGER; Tiberti-ADMINISTRADOR DE BASE DE DATOS; Tiberti-ADMINISTRADOR DEL ENTORNO DE DESARROLLO; Croci-ANALISTA FUNCIONAL; Rodriguez-ARQUITECTO DE SOFTWARE; Budic-TESTER; Croci-DISEÑADOR DE EXPERIENCIA DE USUARIO | 14h | 12.2h |
| 11 | 1.2.4 | Calcular el camino crítico | 3h | 2015-05-10 A | 2015-05-10 A | 12 | 100% |  |  |  | Rodriguez-PROJECT CONTROLLER | 3h | 3h |
| 12 | 1.2.5 | Realizar diagrama de Gantt | 25h | 2015-04-28 A | 2015-05-10 | 10 | 80% | 5h | 80.4d |  | Rodriguez-PROJECT CONTROLLER | 25h | 20h |
| 13 | 1.3 | **Roles y Responsabilidades** | 1d | 2015-05-10 A | 2015-05-12 A |  | 100% |  |  |  |  | 7h | 7h |
| 14 | 1.3.1 | Identificar roles | 2h | 2015-05-10 A | 2015-05-10 A | 12 | 100% |  |  |  | Budic-PROJECT MANAGER; Croci-ANALISTA FUNCIONAL | 4h | 4h |
| 15 | 1.3.2 | Asignar responsabilidades a los roles | 3h | 2015-05-10 A | 2015-05-12 A | 14 | 100% |  |  |  | Budic-PROJECT MANAGER | 3h | 3h |
| 16 | 1.4 | **Habilidades y Competencias** | 1.2d | 2015-05-12 A | 2015-05-16 A |  | 100% |  |  |  |  | 6h | 6h |
| 17 | 1.4.1 | Asignar competencias a los roles | 6h | 2015-05-12 A | 2015-05-16 A | 15 | 100% |  |  |  | Budic-PROJECT MANAGER | 6h | 6h |
| 18 | 1.5 | **Comunicación** | 0.4d | 2015-05-16 A | 2015-05-17 A |  | 100% |  |  |  |  | 2h | 2h |
| 19 | 1.5.1 | Establecer canales de comunicación entre roles | 2h | 2015-05-16 A | 2015-05-17 A | 17 | 100% |  |  |  | Budic-PROJECT MANAGER | 2h | 2h |
| 20 | 1.6 | **WBS** | 1.6d | 2015-04-18 A | 2015-04-19 A |  | 100% |  |  |  |  | 16h | 16h |
| 21 | 1.6.1 | Definir entregables | 8h | 2015-04-18 A | 2015-04-19 A | 6 | 100% |  |  |  | Budic-PROJECT MANAGER; Croci-ANALISTA FUNCIONAL | 16h | 16h |
| 22 | 2 | **Diseño** | 28d | 2015-04-25 A | 2015-06-28 |  | 71% | 8.02d | 59.2d |  |  | 197h | 134.5h |
| 23 | 2.1 | **Casos de Uso** | 16.8d | 2015-05-12 A | 2015-06-21 |  | 90% | 1.68d | 5.6d |  |  | 104h | 93.8h |
| 24 | 2.1.1 | Identificar actores y funcionalidades | 25h | 2015-05-12 A | 2015-05-24 | 21, 13 | 90% | 2.5h | 1.28d | 0d | Croci-ANALISTA FUNCIONAL; Budic-ANALISTA FUNCIONAL | 50h | 45h |
| 25 | 2.1.2 | Describir casos de uso | 48h | 2015-05-24 A | 2015-06-21 | 24 | 90% | 4.8h | 0.12d | 0d | Croci-ANALISTA FUNCIONAL; Budic-PROJECT MANAGER | 50h | 45.2h |
| 26 | 2.1.3 | Describir las relaciones entre los actores y casos de uso | 4h | 2015-06-14 A | 2015-06-21 | 24, 25 | 90% | 0.4h | 5.6d | 0d | Croci-ANALISTA FUNCIONAL; Budic-ANALISTA FUNCIONAL | 4h | 3.6h |

| ID | WBS | Task | Duration | Start | Finish | Predecessors | Complete | Remaining | Total slack | Free slack | Resources | Work | Actual work |
| --- | --- | --- | --- | --- | --- | --- | --- | --- | --- | --- | --- | --- | --- |
| 27 | 2.2 | **DER** | 11.6d | 2015-05-24 A | 2015-06-21 |  | 58% | 4.85d | 1.5d |  |  | 38h | 27.2h |
| 28 | 2.2.1 | Definir entidades y sus atributos | 8h | 2015-05-24 A | 2015-05-29 | 24 | 80% | 1.6h | 8.48d | 0d | Tiberti-ADMINISTRADOR DE BASE DE DATOS; Croci-ANALISTA FUNCIONAL; Rodriguez-ARQUITECTO DE SOFTWARE; Budic-PROJECT MANAGER | 24h | 20.8h |
| 29 | 2.2.2 | Describir las relaciones entre las entidades | 8h | 2015-05-29 A | 2015-06-18 | 28 | 80% | 1.6h | 1.5d | 0d | Tiberti-ADMINISTRADOR DE BASE DE DATOS; Croci-ANALISTA FUNCIONAL | 8h | 6.4h |
| 30 | 2.2.3 | Normalizar DER | 6h | 2015-06-18 | 2015-06-21 | 29 |  |  | 1.5d | 0d | Tiberti-ADMINISTRADOR DE BASE DE DATOS | 6h |  |
| 31 | 2.3 | **Maqueta del Front-End** | 2d | 2015-06-21 A | 2015-06-26 |  | 75% | 0.5d | 59.2d | 11.6d |  | 10h | 7.5h |
| 32 | 2.3.1 | Diseñar disposición de elementos estéticamente | 10h | 2015-06-21 A | 2015-06-26 | 30 | 75% | 2.5h | 59.2d |  | Croci-DISEÑADOR DE EXPERIENCIA DE USUARIO | 10h | 7.5h |
| 33 | 2.4 | **Documento De Arquitectura** | 1.6d | 2015-04-25 A | 2015-04-27 |  | 75% | 0.4d | 85.6d |  |  | 8h | 6h |
| 34 | 2.4.1 | Definir arquitectura de software | 8h | 2015-04-25 A | 2015-04-27 | 8 | 75% | 2h | 85.6d |  | Rodriguez-ARQUITECTO DE SOFTWARE | 8h | 6h |
| 35 | 2.5 | **Especificación de la BD** | 3.4d | 2015-06-21 | 2015-06-28 |  |  |  | 5.6d |  |  | 37h |  |
| 36 | 2.5.1 | Diseño de tablas de la BD | 6h | 2015-06-21 | 2015-06-23 | 30, 26 |  |  | 5.6d | 0d | Tiberti-ADMINISTRADOR DE BASE DE DATOS; Croci-ANALISTA FUNCIONAL; Rodriguez-ARQUITECTO DE SOFTWARE | 18h |  |
| 37 | 2.5.2 | Definir tipo y volumen de datos | 3h | 2015-06-26 | 2015-06-27 | 38 |  |  | 5.6d | 0d | Tiberti-ADMINISTRADOR DE BASE DE DATOS | 3h |  |
| 38 | 2.5.3 | Relaciones entre las tablas de la BD | 3h | 2015-06-23 | 2015-06-26 | 36 |  |  | 5.6d | 0d | Tiberti-ADMINISTRADOR DE BASE DE DATOS | 3h |  |
| 39 | 2.5.4 | Definir políticas de seguridad e integridad | 5h | 2015-06-27 | 2015-06-28 | 37 |  |  | 5.6d | 0d | Tiberti-ADMINISTRADOR DE BASE DE DATOS; Croci-ANALISTA FUNCIONAL; Rodriguez-ARQUITECTO DE SOFTWARE | 13h |  |
| 40 | 3 | **Desarrollo** | 85.4d? | 2015-04-27 A | 2015-11-14 |  | 7% | 79.23d? | 2.9d |  |  | 1438h | 95h |
| 41 | 3.1 | Inicio Capacitación en HTML | 20h | 2015-04-27 A | 2015-05-11 A | 34 | 100% |  |  |  | Tiberti-DESAROLLADOR | 20h | 20h |
| 42 | 3.2 | Inicio Capacitación en Java | 20h | 2015-04-27 A | 2015-05-11 A | 34 | 100% |  |  |  | Croci-DESAROLLADOR | 20h | 20h |
| 43 | 3.3 | Inicio Capacitación en CSS | 20h | 2015-04-27 A | 2015-05-11 A | 34 | 100% |  |  |  | Budic-DESAROLLADOR | 20h | 20h |
| 44 | 3.4 | Inicio Capacitación en PHP | 20h | 2015-04-27 A | 2015-05-11 A | 34 | 100% |  |  |  | Rodriguez-DESAROLLADOR | 20h | 20h |
| 45 | 3.5 | Capacitación en HTML | 80h | 2015-05-09 A | 2015-06-22 | 41 | 13% | 70h | 64.3d |  | Tiberti-DESAROLLADOR | 80h | 10h |
| 46 | 3.6 | Capacitación en Java | 10h | 2015-05-11 | 2015-05-17 | 42 |  |  | 80.3d |  | Croci-DESAROLLADOR | 10h |  |
| 47 | 3.7 | Capacitación en CSS | 80h | 2015-05-09 A | 2015-11-14 | 43 | 6% | 75h | 2.9d |  | Budic-DESAROLLADOR | 80h | 5h |
| 48 | 3.8 | Capacitación en PHP | 70h | 2015-05-11 | 2015-06-14 | 44 |  |  | 68.3d |  | Rodriguez-DESAROLLADOR | 70h |  |
| 49 | 3.9 | **Escribir código de Plantillas** | 71.6d? | 2015-05-11 | 2015-10-25 |  |  |  | 0d |  |  | 200h |  |
| 50 | 3.9.1 | Inscribirse al portal | 10h | 2015-05-11 | 2015-05-17 | 41, 43 |  |  | 0d |  | Budic-DESAROLLADOR | 10h |  |
| 51 | 3.9.2 | Autenticarse como usuario | 10h? | 2015-05-17 | 2015-05-23 | 50 |  |  | 0d |  | Budic-DESAROLLADOR | 10h |  |
| 52 | 3.9.3 | Modificar Usuario | 10h? | 2015-06-01 | 2015-06-07 | 51 |  |  | 0d |  | Budic-DESAROLLADOR | 10h |  |
| 53 | 3.9.4 | Dar de baja Usuario | 10h? | 2015-06-07 | 2015-06-13 | 52 |  |  | 0d |  | Budic-DESAROLLADOR | 10h |  |
| 54 | 3.9.5 | Inscribirse como emprendedor | 10h? | 2015-07-11 | 2015-07-15 | 134 |  |  | 0d |  | Budic-DESAROLLADOR | 10h |  |
| 55 | 3.9.6 | Aprobar inscripción como emprendedor | 10h? | 2015-07-15 | 2015-07-19 | 54 |  |  | 0d |  | Budic-DESAROLLADOR | 10h |  |
| 56 | 3.9.7 | Aplicar para crear emprendimiento | 10h? | 2015-07-21 | 2015-07-26 | 55 |  |  | 0d |  | Budic-DESAROLLADOR | 10h |  |
| 57 | 3.9.8 | Aprobar emprendimiento | 10h? | 2015-08-01 | 2015-08-04 | 56 |  |  | 0d |  | Budic-DESAROLLADOR | 10h |  |
| 58 | 3.9.9 | Modificar emprendimiento | 10h? | 2015-08-04 | 2015-08-09 | 57 |  |  | 0d |  | Budic-DESAROLLADOR | 10h |  |
| 59 | 3.9.10 | Dar de baja emprendimiento | 10h? | 2015-08-09 | 2015-08-15 | 58 |  |  | 0d |  | Budic-DESAROLLADOR | 10h |  |
| 60 | 3.9.11 | Solicitar asociación a emprendimiento | 10h? | 2015-08-20 | 2015-08-23 | 135 |  |  | 0d |  | Budic-DESAROLLADOR | 10h |  |
| 61 | 3.9.12 | Responder a inversor | 10h? | 2015-08-29 | 2015-09-01 | 60 |  |  | 0d |  | Budic-DESAROLLADOR | 10h |  |
| 62 | 3.9.13 | Aceptar solicitud de asociación | 10h? | 2015-09-01 | 2015-09-06 | 61 |  |  | 0d |  | Budic-DESAROLLADOR | 10h |  |
| 63 | 3.9.14 | Consultar información a emprendedor | 10h? | 2015-09-12 | 2015-09-15 | 62 |  |  | 0d |  | Budic-DESAROLLADOR | 10h |  |
| 64 | 3.9.15 | Buscar/filtrar emprendimientos | 10h? | 2015-09-15 | 2015-09-20 | 63 |  |  | 0d |  | Budic-DESAROLLADOR | 10h |  |
| 65 | 3.9.16 | Promocionar emprendimiento | 10h? | 2015-09-20 | 2015-09-26 | 64 |  |  | 0d |  | Budic-DESAROLLADOR | 10h |  |
| 66 | 3.9.17 | Configurar seguimiento de emprendimiento | 10h? | 2015-10-03 | 2015-10-05 | 136 |  |  | 0d |  | Budic-DESAROLLADOR | 10h |  |
| 67 | 3.9.18 | Crear Agenda | 10h? | 2015-10-11 | 2015-10-17 | 66 |  |  | 0d |  | Budic-DESAROLLADOR | 10h |  |
| 68 | 3.9.19 | Modificar agenda | 10h? | 2015-10-17 | 2015-10-22 | 67 |  |  | 0d |  | Budic-DESAROLLADOR | 10h |  |
| 69 | 3.9.20 | Difundir Mail | 10h? | 2015-10-22 | 2015-10-25 | 68 |  |  | 0d |  | Budic-DESAROLLADOR | 10h |  |

| ID | WBS | Task | Duration | Start | Finish | Predecessors | Total slack | Free slack | Resources | Work |
| --- | --- | --- | --- | --- | --- | --- | --- | --- | --- | --- |
| 70 | 3.10 | **Escribir código JavaScript** | 68.6d? | 2015-05-17 | 2015-10-24 |  | 1d |  |  | 202h |
| 71 | 3.10.1 | Inscribirse al portal | 12h? | 2015-05-17 | 2015-05-23 | 42 | 1.2d | 0d | Croci-DESAROLLADOR | 12h |
| 72 | 3.10.2 | Autenticarse como usuario | 10h? | 2015-05-23 | 2015-05-27 | 71 | 1.2d | 0d | Croci-DESAROLLADOR | 10h |
| 73 | 3.10.3 | Modificar Usuario | 10h? | 2015-05-27 | 2015-05-31 | 72 | 1.2d | 0d | Croci-DESAROLLADOR | 10h |
| 74 | 3.10.4 | Dar de baja Usuario | 10h? | 2015-05-31 | 2015-06-06 | 73 | 1.2d | 0d | Croci-DESAROLLADOR | 10h |
| 75 | 3.10.5 | Inscribirse como emprendedor | 10h? | 2015-06-28 | 2015-07-04 | 139 | 1.2d | 0d | Croci-DESAROLLADOR | 10h |
| 76 | 3.10.6 | Aprobar inscripción como emprendedor | 10h? | 2015-07-04 | 2015-07-06 | 75 | 1.2d | 0d | Croci-DESAROLLADOR | 10h |
| 77 | 3.10.7 | Aplicar para crear emprendimiento | 10h? | 2015-07-06 | 2015-07-12 | 76 | 1.2d | 0d | Croci-DESAROLLADOR | 10h |
| 78 | 3.10.8 | Aprobar emprendimiento | 10h? | 2015-07-12 | 2015-07-19 | 77 | 1.2d | 0d | Croci-DESAROLLADOR | 10h |
| 79 | 3.10.9 | Modificar emprendimiento | 10h? | 2015-07-19 | 2015-07-26 | 78 | 1.2d | 0d | Croci-DESAROLLADOR | 10h |
| 80 | 3.10.10 | Dar de baja emprendimiento | 10h? | 2015-07-26 | 2015-08-02 | 79 | 1.2d | 0d | Croci-DESAROLLADOR | 10h |
| 81 | 3.10.11 | Solicitar asociación a emprendimiento | 10h? | 2015-08-20 | 2015-08-23 | 140 | 1d | 0d | Croci-DESAROLLADOR | 10h |
| 82 | 3.10.12 | Responder a inversor | 10h? | 2015-08-26 | 2015-08-30 | 81 | 1.6d | 0d | Croci-DESAROLLADOR | 10h |
| 83 | 3.10.13 | Aceptar solicitud de asociación | 10h? | 2015-08-30 | 2015-09-05 | 82 | 1.6d | 0d | Croci-DESAROLLADOR | 10h |
| 84 | 3.10.14 | Consultar información a emprendedor | 10h? | 2015-09-09 | 2015-09-13 | 83 | 0.4d | 0d | Croci-DESAROLLADOR | 10h |
| 85 | 3.10.15 | Buscar/filtrar emprendimientos | 10h? | 2015-09-13 | 2015-09-19 | 84 | 0.4d | 0d | Croci-DESAROLLADOR | 10h |
| 86 | 3.10.16 | Promocionar emprendimiento | 10h? | 2015-09-19 | 2015-09-23 | 85 | 0.4d | 0d | Croci-DESAROLLADOR | 10h |
| 87 | 3.10.17 | Configurar seguimiento de emprendimiento | 10h? | 2015-10-01 | 2015-10-04 | 141 | 0.4d | 0d | Croci-DESAROLLADOR | 10h |
| 88 | 3.10.18 | Crear Agenda | 10h? | 2015-10-10 | 2015-10-15 | 87 | 1d | 0d | Croci-DESAROLLADOR | 10h |
| 89 | 3.10.19 | Modificar agenda | 10h? | 2015-10-15 | 2015-10-18 | 88 | 1d | 0d | Croci-DESAROLLADOR | 10h |
| 90 | 3.10.20 | Difundir Mail | 10h? | 2015-10-18 | 2015-10-24 | 89 | 1d | 0d | Croci-DESAROLLADOR | 10h |
| 91 | 3.11 | **Escribir código PHP** | 56.4d? | 2015-06-14 | 2015-10-24 |  | 1.2d |  |  | 180h |
| 92 | 3.11.1 | Inscribirse al portal | 9h? | 2015-06-14 | 2015-06-19 | 44 | 1.6d | 0d | Rodriguez-DESAROLLADOR | 9h |
| 93 | 3.11.2 | Autenticarse como usuario | 9h? | 2015-06-21 | 2015-06-27 | 149 | 1.6d | 0d | Rodriguez-DESAROLLADOR | 9h |
| 94 | 3.11.3 | Modificar Usuario | 9h? | 2015-06-28 | 2015-07-03 | 93 | 1.2d | 0d | Rodriguez-DESAROLLADOR | 9h |
| 95 | 3.11.4 | Dar de baja Usuario | 9h? | 2015-07-03 | 2015-07-05 | 94 | 1.2d | 0d | Rodriguez-DESAROLLADOR | 9h |
| 96 | 3.11.5 | Inscribirse como emprendedor | 9h? | 2015-07-05 | 2015-07-11 | 95 | 1.2d | 0d | Rodriguez-DESAROLLADOR | 9h |
| 97 | 3.11.6 | Aprobar inscripción como emprendedor | 9h? | 2015-07-11 | 2015-07-14 | 96 | 1.2d | 0d | Rodriguez-DESAROLLADOR | 9h |
| 98 | 3.11.7 | Aplicar para crear emprendimiento | 9h? | 2015-07-14 | 2015-07-19 | 97 | 1.2d | 0d | Rodriguez-DESAROLLADOR | 9h |
| 99 | 3.11.8 | Aprobar emprendimiento | 9h? | 2015-08-01 | 2015-08-03 | 150 | 1.2d | 0d | Rodriguez-DESAROLLADOR | 9h |
| 100 | 3.11.9 | Modificar emprendimiento | 9h? | 2015-08-03 | 2015-08-09 | 99 | 1.2d | 0d | Rodriguez-DESAROLLADOR | 9h |
| 101 | 3.11.10 | Dar de baja emprendimiento | 9h? | 2015-08-09 | 2015-08-13 | 100 | 1.2d | 0d | Rodriguez-DESAROLLADOR | 9h |
| 102 | 3.11.11 | Solicitar asociación a emprendimiento | 9h? | 2015-08-13 | 2015-08-23 | 101 | 1.2d | 0d | Rodriguez-DESAROLLADOR | 9h |
| 103 | 3.11.12 | Responder a inversor | 9h? | 2015-08-23 | 2015-08-27 | 102 | 1.2d | 0d | Rodriguez-DESAROLLADOR | 9h |
| 104 | 3.11.13 | Aceptar solicitud de asociación | 9h? | 2015-08-27 | 2015-08-30 | 103 | 1.2d | 0d | Rodriguez-DESAROLLADOR | 9h |
| 105 | 3.11.14 | Consultar información a emprendedor | 9h? | 2015-09-12 | 2015-09-14 | 151 | 2d | 0d | Rodriguez-DESAROLLADOR | 9h |
| 106 | 3.11.15 | Buscar/filtrar emprendimientos | 9h? | 2015-09-14 | 2015-09-20 | 105 | 2d | 0d | Rodriguez-DESAROLLADOR | 9h |
| 107 | 3.11.16 | Promocionar emprendimiento | 9h? | 2015-09-20 | 2015-09-24 | 106 | 2d | 0d | Rodriguez-DESAROLLADOR | 9h |
| 108 | 3.11.17 | Configurar seguimiento de emprendimiento | 9h? | 2015-09-24 | 2015-10-04 | 107 | 2d | 0d | Rodriguez-DESAROLLADOR | 9h |
| 109 | 3.11.18 | Crear Agenda | 9h? | 2015-10-11 | 2015-10-16 | 152 | 1.2d | 0d | Rodriguez-DESAROLLADOR | 9h |
| 110 | 3.11.19 | Modificar agenda | 9h? | 2015-10-16 | 2015-10-18 | 109 | 1.2d | 0d | Rodriguez-DESAROLLADOR | 9h |
| 111 | 3.11.20 | Difundir Mail | 9h? | 2015-10-18 | 2015-10-24 | 110 | 1.2d |  | Rodriguez-DESAROLLADOR | 9h |

| ID | WBS | Task | Duration | Start | Finish | Predecessors | Total slack | Free slack | Resources | Work |
| --- | --- | --- | --- | --- | --- | --- | --- | --- | --- | --- |
| 112 | 3.12 | **Escribir script de la base de datos** | 47.8d? | 2015-06-28 | 2015-10-18 |  | 3.4d |  |  | 220h |
| 113 | 3.12.1 | Inscribirse al portal | 9h? | 2015-06-28 | 2015-07-04 | 39 | 5.6d | 0d | Tiberti-DESAROLLADOR; Rodriguez-ARQUITECTO DE SOFTWARE | 11h |
| 114 | 3.12.2 | Autenticarse como usuario | 9h? | 2015-07-04 | 2015-07-06 | 113 | 5.6d | 0d | Tiberti-DESAROLLADOR; Rodriguez-ARQUITECTO DE SOFTWARE | 11h |
| 115 | 3.12.3 | Modificar Usuario | 9h? | 2015-07-06 | 2015-07-12 | 114 | 5.6d | 0d | Tiberti-DESAROLLADOR; Rodriguez-ARQUITECTO DE SOFTWARE | 11h |
| 116 | 3.12.4 | Dar de baja Usuario | 9h? | 2015-07-12 | 2015-07-16 | 115 | 5.6d | 0d | Tiberti-DESAROLLADOR; Rodriguez-ARQUITECTO DE SOFTWARE | 11h |
| 117 | 3.12.5 | Inscribirse como emprendedor | 9h? | 2015-07-21 | 2015-07-26 | 144 | 5.6d | 0d | Tiberti-DESAROLLADOR; Rodriguez-ARQUITECTO DE SOFTWARE | 11h |
| 118 | 3.12.6 | Aprobar inscripción como emprendedor | 9h? | 2015-07-26 | 2015-07-31 | 117 | 5.6d | 0d | Tiberti-DESAROLLADOR; Rodriguez-ARQUITECTO DE SOFTWARE | 11h |
| 119 | 3.12.7 | Aplicar para crear emprendimiento | 9h? | 2015-07-31 | 2015-08-02 | 118 | 5.6d | 0d | Tiberti-DESAROLLADOR; Rodriguez-ARQUITECTO DE SOFTWARE | 11h |
| 120 | 3.12.8 | Aprobar emprendimiento | 9h? | 2015-08-02 | 2015-08-08 | 119 | 5.6d | 0d | Tiberti-DESAROLLADOR; Rodriguez-ARQUITECTO DE SOFTWARE | 11h |
| 121 | 3.12.9 | Modificar emprendimiento | 11h? | 2015-08-08 | 2015-08-16 | 120 | 5.6d | 0d | Tiberti-DESAROLLADOR; Rodriguez-ARQUITECTO DE SOFTWARE | 11h |
| 122 | 3.12.10 | Dar de baja emprendimiento | 9h? | 2015-08-16 | 2015-08-22 | 121 | 5.6d | 0d | Tiberti-DESAROLLADOR; Rodriguez-ARQUITECTO DE SOFTWARE | 11h |
| 123 | 3.12.11 | Solicitar asociación a emprendimiento | 9h? | 2015-08-26 | 2015-08-30 | 145 | 4d | 0d | Tiberti-DESAROLLADOR; Rodriguez-ARQUITECTO DE SOFTWARE | 11h |
| 124 | 3.12.12 | Responder a inversor | 9h? | 2015-08-30 | 2015-09-05 | 123 | 4d | 0d | Tiberti-DESAROLLADOR; Rodriguez-ARQUITECTO DE SOFTWARE | 11h |
| 125 | 3.12.13 | Aceptar solicitud de asociación | 9h? | 2015-09-05 | 2015-09-06 | 124 | 4d | 0d | Tiberti-DESAROLLADOR; Rodriguez-ARQUITECTO DE SOFTWARE | 11h |
| 126 | 3.12.14 | Consultar información a emprendedor | 9h? | 2015-09-06 | 2015-09-12 | 125 | 4d | 0d | Tiberti-DESAROLLADOR; Rodriguez-ARQUITECTO DE SOFTWARE | 11h |
| 127 | 3.12.15 | Buscar/filtrar emprendimientos | 9h? | 2015-09-12 | 2015-09-16 | 126 | 4d | 0d | Tiberti-DESAROLLADOR; Rodriguez-ARQUITECTO DE SOFTWARE | 11h |
| 128 | 3.12.16 | Promocionar emprendimiento | 9h? | 2015-09-16 | 2015-09-20 | 127 | 4d | 0d | Tiberti-DESAROLLADOR; Rodriguez-ARQUITECTO DE SOFTWARE | 11h |
| 129 | 3.12.17 | Configurar seguimiento de emprendimiento | 9h? | 2015-10-03 | 2015-10-04 | 146 | 3.4d | 0d | Tiberti-DESAROLLADOR; Rodriguez-ARQUITECTO DE SOFTWARE | 11h |
| 130 | 3.12.18 | Crear Agenda | 9h? | 2015-10-04 | 2015-10-10 | 129 | 3.4d | 0d | Tiberti-DESAROLLADOR; Rodriguez-ARQUITECTO DE SOFTWARE | 11h |
| 131 | 3.12.19 | Modificar agenda | 9h? | 2015-10-10 | 2015-10-14 | 130 | 3.4d | 0d | Tiberti-DESAROLLADOR; Rodriguez-ARQUITECTO DE SOFTWARE | 11h |
| 132 | 3.12.20 | Difundir Mail | 9h? | 2015-10-14 | 2015-10-18 | 131 | 3.4d | 0d | Tiberti-DESAROLLADOR; Rodriguez-ARQUITECTO DE SOFTWARE | 11h |
| 133 | 3.13 | **Revisión de pares de Plantillas** | 61d? | 2015-06-13 | 2015-11-01 |  | 0d |  |  | 96h |
| 134 | 3.13.1 | Revision 1 | 24h? | 2015-06-13 | 2015-06-28 | 53 | 0d |  | Croci-DESAROLLADOR; Rodriguez-DESAROLLADOR | 24h |
| 135 | 3.13.2 | Revision 2 | 12h? | 2015-08-15 | 2015-08-20 | 59 | 0d |  | Croci-DESAROLLADOR; Rodriguez-DESAROLLADOR | 24h |
| 136 | 3.13.3 | Revision 3 | 12h? | 2015-09-26 | 2015-10-01 | 65 | 0d |  | Croci-DESAROLLADOR; Rodriguez-DESAROLLADOR | 24h |
| 137 | 3.13.4 | Revision 4 | 12h? | 2015-10-25 | 2015-11-01 | 69 | 8.3d |  | Croci-DESAROLLADOR; Rodriguez-DESAROLLADOR | 24h |

| ID | WBS | Task | Duration | Start | Finish | Predecessors | Total slack | Free slack | Constraint | Resources | Work |
| --- | --- | --- | --- | --- | --- | --- | --- | --- | --- | --- | --- |
| 138 | 3.14 | **Revisión de pares de JavaScript** | 60.6d? | 2015-06-13 | 2015-10-31 |  | 1.2d | 0.8d |  |  | 80h |
| 139 | 3.14.1 | Revision 1 | 20h? | 2015-06-13 | 2015-06-28 | 74 | 1.2d | 0d |  | Tiberti-DESAROLLADOR; Budic-DESAROLLADOR | 20h |
| 140 | 3.14.2 | Revision 2 | 20h? | 2015-08-08 | 2015-08-18 | 80 | 0.4d | 0d |  | Tiberti-DESAROLLADOR; Budic-DESAROLLADOR | 20h |
| 141 | 3.14.3 | Revision 3 | 14h? | 2015-09-23 | 2015-09-29 | 86 | 0.4d | 0d |  | Tiberti-DESAROLLADOR; Budic-DESAROLLADOR | 20h |
| 142 | 3.14.4 | Revision 4 | 15h? | 2015-10-24 | 2015-10-31 | 90 | 5.6d |  |  | Tiberti-DESAROLLADOR; Budic-DESAROLLADOR | 20h |
| 143 | 3.15 | **Revisión de pares de la base de datos** | 46.8d? | 2015-07-16 | 2015-11-01 |  | 4.8d | 0d |  |  | 32h |
| 144 | 3.15.1 | Revision 1 | 8h? | 2015-07-16 | 2015-07-21 | 116 | 5.6d | 0d |  | Budic-DESAROLLADOR; Croci-DESAROLLADOR | 8h |
| 145 | 3.15.2 | Revision 2 | 4h? | 2015-08-23 | 2015-08-26 | 122 | 4d | 0d |  | Budic-DESAROLLADOR; Croci-DESAROLLADOR | 8h |
| 146 | 3.15.3 | Revision 3 | 8h? | 2015-09-23 | 2015-10-03 | 128 | 3.4d | 0d |  | Budic-DESAROLLADOR; Croci-DESAROLLADOR | 8h |
| 147 | 3.15.4 | Revision 4 | 8h? | 2015-10-24 | 2015-11-01 | 132 | 4.8d |  |  | Budic-DESAROLLADOR; Croci-DESAROLLADOR | 8h |
| 148 | 3.16 | **Revisión de pares de PHP** | 49.2d? | 2015-06-19 | 2015-10-11 |  | 1.2d |  |  |  | 80h |
| 149 | 3.16.1 | Revision 1 | 10h? | 2015-06-19 | 2015-06-21 | 92 | 1.6d | 0d |  | Budic-DESAROLLADOR; Croci-DESAROLLADOR | 20h |
| 150 | 3.16.2 | Revision 2 | 20h? | 2015-07-19 | 2015-08-01 | 98 | 1.2d | 0d |  | Budic-DESAROLLADOR; Croci-DESAROLLADOR | 20h |
| 151 | 3.16.3 | Revision 3 | 14h? | 2015-09-05 | 2015-09-12 | 104 | 2d | 0d |  | Budic-DESAROLLADOR; Croci-DESAROLLADOR | 20h |
| 152 | 3.16.4 | Revision 4 | 12h? | 2015-10-04 | 2015-10-11 | 108 | 1.2d | 0d |  | Budic-DESAROLLADOR; Croci-DESAROLLADOR | 20h |
| 153 | 3.17 | **Promoción** | 3.6d | 2015-07-22 | 2015-08-01 |  | 47.6d |  |  |  | 28h |
| 154 | 3.17.1 | Realizar presentación comercial | 10h | 2015-07-26 | 2015-08-01 | 155 | 48.3d |  |  | Croci-ANALISTA FUNCIONAL; Croci-DISEÑADOR DE EXPERIENCIA DE USUARIO; Budic-PROJECT MANAGER | 20h |
| 155 | 3.17.2 | Realizar poster comercial | 8h | 2015-07-22 | 2015-07-26 | 31 | 47.6d | 0d | start no earlier than 2015-07-22 | Croci-DISEÑADOR DE EXPERIENCIA DE USUARIO | 8h |
| 156 | 4 | **Testing** | 62.6d | 2015-06-21 | 2015-11-14 |  | 2.7d |  |  |  | 72h |
| 157 | 4.1 | Armar el plan de pruebas | 8h | 2015-06-28 | 2015-07-04 | 158 | 60.3d |  |  | Croci-ANALISTA FUNCIONAL; Budic-PROJECT MANAGER | 16h |
| 158 | 4.2 | Definir los casos de prueba | 14h | 2015-06-21 | 2015-06-28 | 26, 30 | 58.8d | 0d |  | Croci-ANALISTA FUNCIONAL; Budic-PROJECT MANAGER | 16h |
| 159 | 4.3 | Ejecutar los casos de prueba | 30h | 2015-10-25 | 2015-11-08 | 49, 70, 91, 112 | 0d |  |  | Budic-TESTER | 30h |
| 160 | 4.4 | Documentar resultados de las pruebas | 10h | 2015-11-08 | 2015-11-14 | 159 | 0d |  |  | Budic-TESTER | 10h |
| 161 | 5 | **Manuales** | 0.4d | 2015-11-01 | 2015-11-01 |  | 4.8d |  |  |  | 6h |
| 162 | 5.1 | Redactar manual de instalación | 2h | 2015-11-01 | 2015-11-01 | 138, 143, 158 | 4.8d |  |  | Tiberti-ADMINISTRADOR DE BASE DE DATOS; Tiberti-ADMINISTRADOR DEL ENTORNO DE DESARROLLO; Tiberti-DESAROLLADOR | 6h |

| ID | WBS | Task | Duration | Start | Finish | Predecessors | Total slack | Resources | Work |
| --- | --- | --- | --- | --- | --- | --- | --- | --- | --- |
| 163 | 6 | **Finalización del Proyecto** | 2.7d | 2015-11-14 | 2015-11-21 |  | 0d |  | 30h |
| 164 | 6.1 | Reflexionar sobre la experiencia realizada | 0.5h | 2015-11-14 | 2015-11-14 | 162, 160, 6, 12, 15, 17, 19, 21, 26, 30, 32, 34, 39, 148, 155 | 0d | Tiberti-ADMINISTRADOR DE BASE DE DATOS; Tiberti-ADMINISTRADOR DEL ENTORNO DE DESARROLLO; Croci-ANALISTA FUNCIONAL; Rodriguez-ARQUITECTO DE SOFTWARE; Tiberti-DESAROLLADOR; Croci-DISEÑADOR DE EXPERIENCIA DE USUARIO; Budic-PROJECT MANAGER; Budic-TESTER | 4h |
| 165 | 6.2 | Analizar errores cometidos | 1h | 2015-11-14 | 2015-11-15 | 164 | 0d | Tiberti-ADMINISTRADOR DE BASE DE DATOS; Tiberti-ADMINISTRADOR DEL ENTORNO DE DESARROLLO; Croci-ANALISTA FUNCIONAL; Rodriguez-ARQUITECTO DE SOFTWARE; Tiberti-DESAROLLADOR; Croci-DISEÑADOR DE EXPERIENCIA DE USUARIO; Budic-PROJECT MANAGER; Budic-TESTER | 8h |
| 166 | 6.3 | Documentación de cierre de proyecto | 6h | 2015-11-15 | 2015-11-16 | 165 | 0d | Croci-ANALISTA FUNCIONAL; Budic-PROJECT MANAGER | 12h |
| 167 | 6.4 | Cerrar el proyecto | 6h | 2015-11-16 | 2015-11-21 | 166 | 0d | Budic-PROJECT MANAGER | 6h |
